# New SL Range 20080106

Schedule from MS Project, 2008-11-26 to 2010-02-24, A marks actual dates.
Maas International

## Calendars

- Standard: Mon-Fri 08:00-12:00, 13:00-17:00; Sat-Sun off.

## Resources

| Resource |
| --- |
| Donald |
| Lewis |
| Van |
| Hard Li |
| Ray |
| Steven |
| John |
| Jerry |
| Adan |
| Peter |
| Alan |
| aden |
| william |
| David |
| TBD1 |

## Schedule

| ID | WBS | Task | Type | Duration | Start | Finish | Predecessors | Complete | Remaining | Baseline start | Baseline finish | Baseline duration | Total slack | Free slack | Constraint | Resources | Work | Actual work |
| --- | --- | --- | --- | --- | --- | --- | --- | --- | --- | --- | --- | --- | --- | --- | --- | --- | --- | --- |
| 1 | 1 | **New SL software platform** |  | 325d | 2008-11-26 A | 2010-02-24 |  | 19% | 264.11d | 2007-01-04 | 2008-10-31 | 456d? | 0d |  |  |  | 11332h | 1438.39h |
| 2 | 1.1 | **Milestone and release** |  | 114.12d | 2009-09-16 | 2010-02-24 |  |  |  |  |  |  | 0d |  |  |  |  |  |
| 3 | 1.1.1 | **Release v1.0 -Basic structure -Sept,2009** |  | 27d | 2009-09-16 | 2009-10-23 |  |  |  |  |  |  | 87.12d |  |  |  |  |  |
| 4 | 1.1.1.1 | Atmel AT91SAM9261S WinCE6 BSP v1.0 | milestone | 0d | 2009-09-16 | 2009-09-16 | 36 |  |  |  |  |  | 114.12d |  |  |  |  |  |
| 5 | 1.1.1.2 | Samsung S3C6410 WinCE6 BSP v1.0 | milestone | 0d | 2009-10-23 | 2009-10-23 | 46 |  |  |  |  |  | 87.12d |  |  |  |  |  |
| 6 | 1.1.1.3 | MAIN application GVMC v1.0 | milestone | 0d | 2009-09-24 | 2009-09-24 | 147, 76, 124 |  |  |  |  |  | 109d |  |  |  |  |  |
| 7 | 1.1.1.4 | IO application SVMC v1.0 | milestone | 0d | 2009-09-24 | 2009-09-24 | 206 |  |  |  |  |  | 108.12d |  |  |  |  |  |
| 8 | 1.1.1.5 | VMC and Service tool v1.0 | milestone | 0d | 2009-09-25 | 2009-09-25 | 274 |  |  |  |  |  | 108d |  |  |  |  |  |
| 9 | 1.1.2 | **Release v2.0 -Basic function(+Vend UI) -Oct,2009** |  | 31.88d | 2009-10-12 | 2009-11-24 |  |  |  |  |  |  | 65.12d |  |  |  |  |  |
| 10 | 1.1.2.1 | Samsung S3C6410 WinCE6 BSP V2.0 | milestone | 0d | 2009-11-24 | 2009-11-24 | 54 |  |  |  |  |  | 65.12d |  |  |  |  |  |
| 11 | 1.1.2.2 | MAIN application GVMC v2.0 | milestone | 0d | 2009-11-03 | 2009-11-03 | 80, 126, 150, 153 |  |  |  |  |  | 80.2d |  |  |  |  |  |
| 12 | 1.1.2.3 | IO application SVMC v2.0 | milestone | 0d | 2009-10-27 | 2009-10-27 | 220 |  |  |  |  |  | 85.12d |  |  |  |  |  |
| 13 | 1.1.2.4 | VMC and Service tool v2.0 | milestone | 0d | 2009-10-12 | 2009-10-12 | 290 |  |  |  |  |  | 97d |  |  |  |  |  |
| 14 | 1.1.3 | **Release v3.0 -full function(+Oper UI) -Dec,2009** |  | 13d | 2009-12-11 | 2009-12-30 |  |  |  |  |  |  | 13d |  |  |  |  |  |
| 15 | 1.1.3.1 | Samsung S3C6410 WinCE6 BSP v3.0 | milestone | 0d | 2009-12-28 | 2009-12-28 | 61 |  |  |  |  |  | 41.12d |  |  |  |  |  |
| 16 | 1.1.3.2 | MAIN application GVMC v3.0 | milestone | 0d | 2009-12-30 | 2009-12-30 | 85, 94, 164, 103 |  |  |  |  |  | 0d |  |  |  |  |  |
| 17 | 1.1.3.3 | IO application SVMC v3.0 | milestone | 0d | 2009-12-21 | 2009-12-21 | 239, 230, 246 |  |  |  |  |  | 6.12d |  |  |  |  |  |
| 18 | 1.1.3.4 | VMC and Service tool v3.0 | milestone | 0d | 2009-12-11 | 2009-12-11 | 297 |  |  |  |  |  | 53d |  |  |  |  |  |
| 19 | 1.1.4 | In-house test release v4.0 -Jan,2009 |  | 4w | 2009-12-30 | 2010-01-27 | 16, 17 |  |  |  |  |  | 0d |  |  |  |  |  |
| 20 | 1.1.5 | Production release v5.0 -Feb,2009 |  | 4w | 2010-01-27 | 2010-02-24 | 19 |  |  |  |  |  | 0d |  |  |  |  |  |
| 21 | 1.10.1 | **Software requirement and system design** |  | 40d | 2009-08-17 | 2009-10-09 |  |  |  | 2007-06-18 | 2008-01-31 | 160d | 23.12d |  |  |  | 368h |  |
| 22 | 1.10.1.3 | SL function requirement specification |  | 5d | 2009-09-07 | 2009-09-11 |  |  |  | 2008-01-18 | 2008-01-24 | 5d | 97.12d | 0d | start no earlier than 2009-09-07 | David | 40h |  |
| 23 | 1.10.1.4 | Review/Update Specification |  | 15d | 2009-09-14 | 2009-10-02 | 22 |  |  | 2008-01-25 | 2008-01-31 | 5d | 97.12d | 0d |  | David | 120h |  |
| 24 | 1.2.3 | Existing UI of SL machine review |  | 3d | 2009-08-17 | 2009-08-19 |  |  |  |  |  |  | 129.12d | 0d | start no earlier than 2009-08-17 | Donald | 24h |  |
| 25 | 1.10.1.9 | Graphic UI cases and proposal |  | 5d | 2009-08-20 | 2009-08-26 | 24 |  |  | 2007-12-29 | 2008-01-07 | 5d | 129.12d |  |  | Donald | 40h |  |
| 26 | 1.10.1.5 | System Architecture design update |  | 3d | 2009-09-01 | 2009-09-03 |  |  |  | 2007-12-25 | 2008-01-08 | 10d | 18.12d | 0d | start no earlier than 2009-09-01 | Donald | 24h |  |
| 27 | 1.10.1.6 | Review/Update System Architecture |  | 5d | 2009-09-04 | 2009-09-10 | 26 |  |  | 2008-01-09 | 2008-01-15 | 5d | 18.12d | 0d |  | Donald | 40h |  |
| 28 | 1.2.7 | Malfunction/error handling design document |  | 5d | 2009-09-11 | 2009-09-17 | 27 |  |  |  |  |  | 18.12d | 0d |  | Donald | 40h |  |
| 29 | 1.2.8 | HACCP food safety control requirement spec |  | 5d | 2009-10-05 | 2009-10-09 | 23 |  |  |  |  |  | 97.12d |  |  | David | 40h |  |

| ID | WBS | Task | Duration | Start | Finish | Predecessors | Baseline start | Baseline finish | Baseline duration | Total slack | Free slack | Constraint | Resources | Work |
| --- | --- | --- | --- | --- | --- | --- | --- | --- | --- | --- | --- | --- | --- | --- |
| 30 | 6.3 | **WinCE BSP of MAIN board** | 106d | 2009-08-03 | 2009-12-28 |  | 2008-01-16 | 2008-09-10 | 165d | 41.12d |  |  | Alan | 848h |
| 31 | 1.3.1 | **AT91SAM9261S BSP** | 36d | 2009-08-03 | 2009-09-21 |  |  |  |  | 41.12d |  |  |  |  |
| 32 | 1.10.4.1.2 | Implement PEL 7" CTP driver and testing | 10d | 2009-08-03 | 2009-08-14 |  | 2008-01-23 | 2008-01-24 | 2d | 41.12d | 0d | start no earlier than 2009-08-03 |  |  |
| 33 | 1.3.1.2 | TI 7" CTP testing | 10d | 2009-08-17 | 2009-08-28 | 32 |  |  |  | 41.12d | 0d |  |  |  |
| 34 | 1.3.1.3 | Implement EELY CTP driver | 3d | 2009-08-31 | 2009-09-02 | 33 |  |  |  | 41.12d | 0d |  |  |  |
| 35 | 1.3.1.4 | Implement backlight driver for Innolux TN84 | 2d | 2009-09-03 | 2009-09-04 | 34 |  |  |  | 41.12d | 0d |  |  |  |
| 36 | 1.3.1.5 | Implement audio driver | 8d | 2009-09-07 | 2009-09-16 | 35 |  |  |  | 41.12d | 0d |  |  |  |
| 37 | 1.3.1.6 | Test on 75460_03 and release | 3d | 2009-09-17 | 2009-09-21 | 36 |  |  |  | 41.12d | 0d |  |  |  |
| 38 | 1.10.4.1 | **WinCE2 BSP detailed design** | 24d | 2009-09-22 | 2009-10-23 |  | 2008-01-16 | 2008-03-12 | 38d | 41.12d |  |  |  |  |
| 39 | 1.10.4.1.4 | Build SMDK BSP and customization | 5d | 2009-09-22 | 2009-09-28 | 37 | 2008-02-04 | 2008-02-22 | 10d | 41.12d | 0d |  |  |  |
| 40 | 1.10.4.1.5 | Integrate 7" LCD driver | 2d | 2009-09-29 | 2009-09-30 | 39 | 2008-02-25 | 2008-02-29 | 5d | 41.12d | 0d |  |  |  |
| 41 | 1.3.2.3 | Integrate 7" CTP driver | 4d | 2009-10-01 | 2009-10-06 | 40 |  |  |  | 41.12d | 0d |  |  |  |
| 42 | 1.10.4.1.6 | Redesign 485 serial driver | 4d | 2009-10-07 | 2009-10-12 | 41 | 2008-03-03 | 2008-03-05 | 3d | 41.12d | 0d |  |  |  |
| 43 | 1.10.4.1.3 | Customize bootloader for new main board | 3d | 2009-10-13 | 2009-10-15 | 42 | 2008-01-25 | 2008-02-03 | 8d | 41.12d | 0d |  |  |  |
| 44 | 1.3.2.6 | Porting USB RNDIS/KITL for OS download via USB | 3d | 2009-10-16 | 2009-10-20 | 43 |  |  |  | 41.12d | 0d |  |  |  |
| 45 | 1.3.2.7 | Implement backlight driver | 1d | 2009-10-21 | 2009-10-21 | 44 |  |  |  | 41.12d | 0d |  |  |  |
| 46 | 1.10.4.1.7 | BSP release v1.0 and testing | 2d | 2009-10-22 | 2009-10-23 | 45 | 2008-03-06 | 2008-03-12 | 5d | 41.12d | 0d |  |  |  |
| 47 | 1.10.4.2 | **WinCE2 BSP extended drivers** | 22d | 2009-10-26 | 2009-11-24 |  | 2008-02-25 | 2008-05-09 | 53d | 41.12d |  |  |  |  |
| 48 | 1.3.3.1 | Porting MDB driver for payment system | 2d | 2009-10-26 | 2009-10-27 | 46 |  |  |  | 41.12d | 0d |  |  |  |
| 49 | 1.3.3.2 | Porting and test MicroSD card driver | 3d | 2009-10-28 | 2009-10-30 | 48 |  |  |  | 41.12d | 0d |  |  |  |
| 50 | 1.3.3.3 | Integrate audio driver | 3d | 2009-11-02 | 2009-11-04 | 49 |  |  |  | 41.12d | 0d |  |  |  |
| 51 | 1.10.4.2.5 | Improve touch panel driver | 5d | 2009-11-05 | 2009-11-11 | 50 | 2008-04-10 | 2008-04-23 | 10d | 41.12d | 0d |  |  |  |
| 52 | 1.3.3.5 | Integrate USB to bluetooth driver | 2d | 2009-11-12 | 2009-11-13 | 51 |  |  |  | 41.12d | 0d |  |  |  |
| 53 | 1.3.3.6 | Integrate USB to Ethernet driver | 3d | 2009-11-16 | 2009-11-18 | 52 |  |  |  | 41.12d | 0d |  |  |  |
| 54 | 1.10.4.2.7 | Integration and Release v2.0 | 4d | 2009-11-19 | 2009-11-24 | 53 | 2008-05-05 | 2008-05-09 | 5d | 41.12d | 0d |  |  |  |

| ID | WBS | Task | Duration | Start | Finish | Predecessors | Complete | Remaining | Baseline start | Baseline finish | Baseline duration | Total slack | Free slack | Constraint | Resources | Work | Actual work |
| --- | --- | --- | --- | --- | --- | --- | --- | --- | --- | --- | --- | --- | --- | --- | --- | --- | --- |
| 55 | 1.10.4.3 | **WinCE2 BSP improvement** | 24d | 2009-11-25 | 2009-12-28 |  |  |  | 2008-05-20 | 2008-06-25 | 26d | 41.12d |  |  |  |  |  |
| 56 | 1.3.4.1 | Video decoder enhancement | 5d | 2009-11-25 | 2009-12-01 | 54 |  |  |  |  |  | 41.12d | 0d |  |  |  |  |
| 57 | 1.3.4.2 | Implement USB to bluetooth driver with more function supported | 3d | 2009-12-02 | 2009-12-04 | 56 |  |  |  |  |  | 41.12d | 0d |  |  |  |  |
| 58 | 1.3.4.3 | Implement Smart card interface for SIM card | 5d | 2009-12-07 | 2009-12-11 | 57 |  |  |  |  |  | 41.12d | 0d |  |  |  |  |
| 59 | 1.3.4.4 | Implement USB to wireless driver | 5d | 2009-12-14 | 2009-12-18 | 58 |  |  |  |  |  | 41.12d | 0d |  |  |  |  |
| 60 | 1.3.4.5 | Testing and bug fixing | 5d | 2009-12-21 | 2009-12-25 | 59 |  |  |  |  |  | 41.12d | 0d |  |  |  |  |
| 61 | 1.10.4.3.3 | Integration and Release v3.0 | 1d | 2009-12-28 | 2009-12-28 | 60 |  |  | 2008-06-25 | 2008-06-25 | 1d | 41.12d | 0d |  |  |  |  |
| 62 | 6.2 | **MAIN GVMC on WinCE OS** | 304d | 2008-11-26 A | 2010-01-26 |  | 31% | 210.84d | 2008-01-16 | 2008-09-23 | 173d | 21d |  |  |  | 6068.01h | 980.77h |
| 63 | 1.10.3.3 | **Vending process** | 6d | 2009-09-18 | 2009-09-25 |  |  |  | 2008-05-27 | 2008-07-29 | 45d | 12.12d |  |  |  | 48h |  |
| 64 | 1.4.1.1 | Components tree and manager improvement | 5d | 2009-09-18 | 2009-09-24 | 28 |  |  |  |  |  | 18.12d | 0d |  | Donald | 40h |  |
| 65 | 1.10.3.3.6 | Integration for release v1.0 | 1d | 2009-09-25 | 2009-09-25 | 64 |  |  | 2008-06-30 | 2008-07-01 | 2d | 18.12d | 0d |  | Donald | 8h |  |
| 66 | 1.4.2 | **User Interface** | 288d | 2008-12-18 A | 2010-01-26 |  | 27% | 211.46d |  |  |  | 21d |  |  |  | 2248h | 640h |
| 67 | 1.4.2.1 | **Vend UI** | 263.8d | 2008-12-18 A | 2009-12-22 |  | 43% | 151.54d |  |  |  | 45.2d |  |  |  | 1504h | 640h |
| 68 | 1.4.2.1.1 | Vend flow( requirment, flow chart) | 12d | 2008-12-18 A | 2009-01-05 A |  | 100% |  |  |  |  |  |  |  | Ray | 96h | 96h |
| 69 | 1.4.2.1.2 | TestUI framework | 24d | 2009-01-05 A | 2009-02-13 A | 68 | 100% |  |  |  |  |  |  |  | Ray | 192h | 192h |
| 70 | 1.4.2.1.3 | TestVendUI with payment | 30d | 2009-03-09 A | 2009-04-20 A |  | 100% |  |  |  |  |  |  |  | Ray | 240h | 240h |
| 71 | 1.4.2.1.4 | VendUIQT | 28d | 2009-05-25 A | 2009-07-02 |  | 50% | 14d |  |  |  | 169d |  |  | Ray | 224h | 112h |
| 72 | 1.4.2.1.5 | Optimize QT | 9d | 2009-08-10 | 2009-08-25 |  |  |  |  |  |  | 5.2d | 0d | start no earlier than 2009-08-10 | Adan | 72h |  |
| 73 | 1.4.2.1.6 | study venduiqt | 5d | 2009-08-25 | 2009-09-01 | 72 |  |  |  |  |  | 5.2d | 0d |  | Adan | 40h |  |
| 74 | 1.4.2.1.7 | improve vending process | 2w | 2009-09-01 | 2009-09-15 | 73 |  |  |  |  |  | 5.2d | 0d |  | Adan | 80h |  |
| 75 | 1.4.2.1.8 | Build UI demo with new graphic icons | 1w | 2009-09-15 | 2009-09-22 | 74 |  |  |  |  |  | 5.2d | 0d |  | Adan | 40h |  |
| 76 | 1.4.2.1.9 | Integration for release v1.0 | 1d | 2009-09-22 | 2009-09-23 | 75 |  |  |  |  |  | 5.2d | 0d |  | Adan | 8h |  |
| 77 | 1.4.2.1.10 | Update UI graphic requirement spec | 3d | 2009-09-23 | 2009-09-28 | 76 |  |  |  |  |  | 5.2d | 0d |  | Adan | 24h |  |
| 78 | 1.4.2.1.11 | Implement vend UI with new UI graphic | 4w | 2009-09-28 | 2009-10-26 | 77 |  |  |  |  |  | 5.2d | 0d |  | Adan | 160h |  |
| 79 | 1.4.2.1.12 | Vend UI with audio | 5d | 2009-10-26 | 2009-11-02 | 78 |  |  |  |  |  | 5.2d | 0d |  | Adan | 40h |  |
| 80 | 1.4.2.1.13 | Itegration for release v2.0 | 1d | 2009-11-02 | 2009-11-03 | 79 |  |  |  |  |  | 5.2d | 0d |  | Adan | 8h |  |
| 81 | 1.4.2.1.14 | Graphic UI concept fixed and improvement | 3w | 2009-11-03 | 2009-11-24 | 80 |  |  |  |  |  | 5.2d | 0d |  | Adan | 120h |  |
| 82 | 1.4.2.1.15 | Menu configuration parser | 3d | 2009-11-24 | 2009-11-27 | 81 |  |  |  |  |  | 5.2d | 0d |  | Adan | 24h |  |
| 83 | 1.4.2.1.16 | multi-language | 1w | 2009-11-27 | 2009-12-04 | 82 |  |  |  |  |  | 5.2d | 0d |  | Adan | 40h |  |
| 84 | 1.4.2.1.17 | bug fixing | 2w | 2009-12-04 | 2009-12-18 | 83 |  |  |  |  |  | 5.2d | 0d |  | Adan | 80h |  |
| 85 | 1.4.2.1.18 | Itegration for release v3.0 | 2d | 2009-12-18 | 2009-12-22 | 84 |  |  |  |  |  | 5.2d |  |  | Adan | 16h |  |

Notes:
- 72: �cut qt (successfully build customized static/dynamic qt libs)/ �fixing debug problem(maybe 460 ram not enough problem)

| ID | WBS | Task | Duration | Start | Finish | Predecessors | Complete | Remaining | Baseline start | Baseline finish | Baseline duration | Total slack | Free slack | Resources | Work | Actual work |
| --- | --- | --- | --- | --- | --- | --- | --- | --- | --- | --- | --- | --- | --- | --- | --- | --- |
| 86 | 1.4.2.2 | **Operator UI** | 57d | 2009-10-12 | 2009-12-30 |  |  |  |  |  |  | 0d |  | william | 536h |  |
| 87 | 1.4.2.2.1 | Graphic operator UI cases | 2w | 2009-10-12 | 2009-10-26 | 126 |  |  |  |  |  | 87d |  | Donald | 80h |  |
| 88 | 1.4.2.2.2 | framework | 2w | 2009-10-12 | 2009-10-26 | 290 |  |  |  |  |  | 0d |  |  |  |  |
| 89 | 1.4.2.2.3 | controls | 2w | 2009-10-26 | 2009-11-09 | 88 |  |  |  |  |  | 0d |  |  |  |  |
| 90 | 1.4.2.2.4 | parameters | 2w | 2009-11-09 | 2009-11-23 | 89 |  |  |  |  |  | 0d |  |  |  |  |
| 91 | 1.4.2.2.5 | statistics | 1w | 2009-11-23 | 2009-11-30 | 90 |  |  |  |  |  | 0d |  |  |  |  |
| 92 | 1.4.2.2.6 | service | 2w | 2009-11-30 | 2009-12-14 | 91 |  |  |  |  |  | 0d |  |  |  |  |
| 93 | 1.4.2.2.7 | utilities | 2w | 2009-12-14 | 2009-12-28 | 92 |  |  |  |  |  | 0d |  |  |  |  |
| 94 | 1.4.2.2.8 | Integration for release v3.0 | 2d | 2009-12-28 | 2009-12-30 | 93 |  |  |  |  |  | 0d |  |  |  |  |
| 95 | 1.4.2.3 | **System UI** | 86.12d | 2009-09-28 | 2010-01-26 |  |  |  |  |  |  | 12.12d |  |  | 208h |  |
| 96 | 1.4.2.3.1 | Startup UI | 3d | 2009-09-28 | 2009-09-30 | 65 |  |  |  |  |  | 18.12d | 0d | Donald | 24h |  |
| 97 | 1.4.2.3.2 | Installation UI | 1w | 2009-10-01 | 2009-10-07 | 96 |  |  |  |  |  | 18.12d | 0d | Donald | 40h |  |
| 98 | 1.4.2.3.3 | Implement Error message UI | 1w | 2009-10-08 | 2009-10-14 | 97 |  |  |  |  |  | 18.12d | 0d | Donald | 40h |  |
| 99 | 1.4.2.3.4 | Standby UI | 2d | 2009-10-15 | 2009-10-16 | 98 |  |  |  |  |  | 18.12d | 0d | Donald | 16h |  |
| 100 | 1.4.2.3.5 | Integration and release v2.0 | 1d | 2009-10-19 | 2009-10-19 | 99 |  |  |  |  |  | 18.12d | 0d | Donald | 8h |  |
| 101 | 1.4.2.3.6 | Maintainence UI | 1w | 2009-12-15 | 2009-12-22 | 164 |  |  |  |  |  | 1d | 0d | Ray | 40h |  |
| 102 | 1.4.2.3.7 | admin UI with Service tool detected | 4d | 2009-12-22 | 2009-12-28 | 101 |  |  |  |  |  | 1d | 0d | Ray | 32h |  |
| 103 | 1.4.2.3.8 | Integration and release v3.0 | 1d | 2009-12-28 | 2009-12-29 | 102 |  |  |  |  |  | 1d | 0d | Ray | 8h |  |
| 104 | 1.4.2.3.9 | Help system UI | 2w | 2009-12-29 | 2010-01-12 | 103 |  |  |  |  |  | 21d | 0d |  |  |  |
| 105 | 1.4.2.3.10 | Advertising Video play | 2w | 2010-01-12 | 2010-01-26 | 104 |  |  |  |  |  | 21d |  |  |  |  |
| 106 | 1.10.3.2 | **Payment system** | 243d | 2008-11-26 A | 2009-11-02 |  | 61% | 94.02d | 2008-03-06 | 2008-05-15 | 49d | 82d |  | Ray | 1944h | 128h |
| 107 | 1.4.3.1 | MDB test | 16d | 2008-11-26 A | 2008-12-18 A |  | 100% |  |  |  |  |  |  |  |  |  |
| 108 | 1.4.3.2 | CreditMgr | 40d | 2009-01-05 A | 2009-03-02 |  | 80% | 8d |  |  |  | 257d |  |  |  |  |
| 109 | 1.4.3.3 | Coin changer implementation | 25d | 2009-04-20 A | 2009-05-25 A |  | 100% |  |  |  |  |  |  |  |  |  |

| ID | WBS | Task | Duration | Start | Finish | Predecessors | Complete | Remaining | Baseline start | Baseline finish | Baseline duration | Total slack | Free slack | Resources | Work | Actual work |
| --- | --- | --- | --- | --- | --- | --- | --- | --- | --- | --- | --- | --- | --- | --- | --- | --- |
| 110 | 1.4.3.4 | **Cashless card general** | 58d | 2009-07-02 A | 2009-09-22 |  | 52% | 28d |  |  |  | 1d |  |  |  |  |
| 111 | 1.4.3.4.1 | MDBCashless test | 8d | 2009-07-02 A | 2009-07-14 A |  | 100% |  |  |  |  |  |  |  |  |  |
| 112 | 1.4.3.4.2 | IPayment->CardDevice | 4d | 2009-07-14 A | 2009-07-20 A | 111 | 100% |  |  |  |  |  |  |  |  |  |
| 113 | 1.4.3.4.3 | CreditMgr Single Payment switch Cash/Card | 2d | 2009-07-21 A | 2009-07-23 A | 112 | 100% |  |  |  |  |  |  |  |  |  |
| 114 | 1.4.3.4.4 | CreditMgr Overpay Limit | 1d | 2009-07-22 A | 2009-07-23 A | 113 | 100% |  |  |  |  |  |  |  |  |  |
| 115 | 1.4.3.4.5 | Revalue | 1w | 2009-07-23 A | 2009-07-30 A | 114 | 100% |  |  |  |  |  |  |  |  |  |
| 116 | 1.4.3.4.6 | Vend process with card | 1w | 2009-07-30 A | 2009-08-06 A | 115 | 100% |  |  |  |  |  |  |  |  |  |
| 117 | 1.4.3.4.7 | Card detail requirment(template) | 1w | 2009-08-06 A | 2009-08-13 A | 116 | 100% |  |  |  |  |  |  |  |  |  |
| 118 | 1.4.3.4.8 | integrate with Adm | 1w | 2009-08-13 | 2009-08-20 | 117 |  |  |  |  |  | 1d | 0d |  |  |  |
| 119 | 1.4.3.4.9 | Redesign cashless device with state machine | 3d | 2009-08-20 | 2009-08-25 | 118 |  |  |  |  |  | 1d | 0d |  |  |  |
| 120 | 1.4.3.4.10 | Card detail requirment(EU) | 1w | 2009-08-25 | 2009-09-01 | 119 |  |  |  |  |  | 1d | 0d |  |  |  |
| 121 | 1.4.3.4.11 | Token (CreditMgr Changer/Card token) | 1w | 2009-09-01 | 2009-09-08 | 120 |  |  |  |  |  | 1d | 0d |  |  |  |
| 122 | 1.4.3.4.12 | Mix payment | 1w | 2009-09-08 | 2009-09-15 | 121 |  |  |  |  |  | 1d | 0d |  |  |  |
| 123 | 1.4.3.4.13 | fault improvement( recoverable timeout) | 1w | 2009-09-15 | 2009-09-22 | 122 |  |  |  |  |  | 1d | 0d |  |  |  |
| 124 | 1.4.3.5 | Integration and test for v1.0 release | 2d | 2009-09-22 | 2009-09-24 | 123 |  |  |  |  |  | 1d | 0d |  |  |  |
| 125 | 1.10.3.2.2 | Cashless card/token for WMF | 2w | 2009-09-24 | 2009-10-08 | 124 |  |  | 2008-03-13 | 2008-03-14 | 2d | 1d | 0d |  |  |  |
| 126 | 1.4.3.7 | Integration and test for v2.0 release | 2d | 2009-10-08 | 2009-10-12 | 125 |  |  |  |  |  | 1d | 0d |  |  |  |
| 127 | 1.4.3.8 | **Bill Reader…** | 13d | 2009-10-12 | 2009-10-29 |  |  |  |  |  |  | 1d |  |  |  |  |
| 128 | 1.4.3.8.1 | Bill reader MDB test | 3d | 2009-10-12 | 2009-10-15 | 126 |  |  |  |  |  | 1d | 0d |  |  |  |
| 129 | 1.10.3.2.4 | Design payment->Bill device | 1w | 2009-10-15 | 2009-10-22 | 128 |  |  | 2008-03-31 | 2008-04-14 | 10d | 1d | 0d |  |  |  |
| 130 | 1.4.3.8.3 | Vend process with bill | 1w | 2009-10-22 | 2009-10-29 | 129 |  |  |  |  |  | 1d | 0d |  |  |  |
| 131 | 1.4.3.9 | Integration and test for v3.0 release | 2d | 2009-10-29 | 2009-11-02 | 130 |  |  |  |  |  | 1d | 0d |  |  |  |
| 132 | 1.4.4 | **Back Office system** | 71.5d | 2009-07-01 A | 2009-10-08 |  | 50% | 35.95d |  |  |  | 98.5d |  |  | 588.01h | 212.77h |
| 133 | 1.4.4.1 | **BOS basic function** | 53.5d | 2009-07-01 A | 2009-09-14 |  | 66% | 17.94d |  |  |  | 116.5d |  | Van | 428.01h | 107.17h |
| 134 | 1.4.4.1.1 | BOSAdm | 7d | 2009-07-01 A | 2009-07-10 |  | 80% | 1.4d |  |  |  | 163d |  |  |  |  |
| 135 | 1.4.4.1.2 | BOSAdmBuffer | 4d | 2009-07-10 A | 2009-07-16 A | 134 | 100% |  |  |  |  |  |  |  |  |  |
| 136 | 1.4.4.1.3 | BOSMutProcessor/BOSOpnProcessor | 3d | 2009-07-17 A | 2009-07-22 A | 135 | 100% |  |  |  |  |  |  |  |  |  |
| 137 | 1.4.4.1.4 | opn,mut data unit test | 6d | 2009-07-22 A | 2009-07-30 A | 136 | 100% |  |  |  |  |  |  |  |  |  |
| 138 | 1.4.4.1.5 | AdmMgr | 4d | 2009-07-24 A | 2009-08-04 A | 137 | 100% |  |  |  |  |  |  |  |  |  |
| 139 | 1.4.4.1.6 | BOS Bus | 5d | 2009-08-31 | 2009-09-07 | 146 |  |  |  |  |  | 54.5d | 0d |  |  |  |
| 140 | 1.4.4.1.7 | COM30 | 5d | 2009-09-07 | 2009-09-14 | 139 |  |  |  |  |  | 54.5d | 0d |  |  |  |

Notes:
- 120: �Requirement for each card (more than 20 cards)/ �Mixpayment requirement

| ID | WBS | Task | Duration | Start | Finish | Predecessors | Complete | Remaining | Baseline start | Baseline finish | Baseline duration | Total slack | Free slack | Resources | Work | Actual work |
| --- | --- | --- | --- | --- | --- | --- | --- | --- | --- | --- | --- | --- | --- | --- | --- | --- |
| 141 | 1.4.4.2 | **EVA 4.1 basic function** | 20d | 2009-08-03 A | 2009-08-31 |  | 66% | 6.8d |  |  |  | 54.5d |  | Van | 160h | 105.6h |
| 142 | 1.4.4.2.1 | EVAAdm | 2d | 2009-08-03 A | 2009-08-05 A | 138 | 100% |  |  |  |  |  |  |  |  |  |
| 143 | 1.4.4.2.2 | anaylse | 2d | 2009-08-05 A | 2009-08-07 A | 142 | 100% |  |  |  |  |  |  |  |  |  |
| 144 | 1.4.4.2.3 | implementation | 5d | 2009-08-07 A | 2009-08-14 A | 143 | 100% |  |  |  |  |  |  |  |  |  |
| 145 | 1.4.4.2.4 | ddcmp | 7d | 2009-08-14 A | 2009-08-25 | 144 | 60% | 2.8d |  |  |  | 54.5d | 0d |  |  |  |
| 146 | 1.4.4.2.5 | EVA Bus | 4d | 2009-08-25 | 2009-08-31 | 145 |  |  |  |  |  | 54.5d | 0d |  |  |  |
| 147 | 1.4.4.3 | Integration and test for v1.0 release | 5d | 2009-09-14 | 2009-09-21 | 140 |  |  |  |  |  | 54.5d | 0d |  |  |  |
| 148 | 1.4.4.4 | EVA 6.1 functions | 1w | 2009-09-21 | 2009-09-28 | 147 |  |  |  |  |  | 54.5d | 0d |  |  |  |
| 149 | 1.4.4.5 | BOS MINL functions | 1w | 2009-09-28 | 2009-10-05 | 148 |  |  |  |  |  | 54.5d | 0d |  |  |  |
| 150 | 1.4.4.6 | Integration and test for v2.0 release | 3d | 2009-10-05 | 2009-10-08 | 149 |  |  |  |  |  | 54.5d | 0d |  |  |  |
| 151 | 1.10.3.5 | **Miscellaneous functions** | 29d | 2009-10-08 | 2009-11-18 |  |  |  | 2008-09-05 | 2008-09-23 | 12d | 54.5d |  | Van | 232h |  |
| 152 | 1.10.3.5.1 | Error handling implementation | 2w | 2009-10-08 | 2009-10-22 | 150 |  |  | 2008-09-05 | 2008-09-19 | 10d | 54.5d | 0d |  |  |  |
| 153 | 1.10.3.5.2 | Jug product support | 3d | 2009-10-22 | 2009-10-27 | 152 |  |  | 2008-09-22 | 2008-09-23 | 2d | 54.5d | 0d |  |  |  |
| 154 | 1.4.5.3 | Integration and test for v2.0 release | 2d | 2009-10-27 | 2009-10-29 | 153 |  |  |  |  |  | 54.5d | 0d |  |  |  |
| 155 | 1.4.5.4 | Ingredient/sales/turnover statistics and log | 7d | 2009-10-29 | 2009-11-09 | 154 |  |  |  |  |  | 54.5d | 0d |  |  |  |
| 156 | 1.4.5.5 | Other functions | 1w | 2009-11-09 | 2009-11-16 | 155 |  |  |  |  |  | 54.5d | 0d |  |  |  |
| 157 | 1.4.5.6 | Integration and test for v3.0 release | 2d | 2009-11-16 | 2009-11-18 | 156 |  |  |  |  |  | 54.5d | 0d |  |  |  |
| 158 | 1.4.6 | **Software Upgrading** | 43d | 2009-11-02 | 2009-12-31 |  |  |  |  |  |  | 1d |  |  | 248h |  |
| 159 | 1.4.6.1 | MAIN GVMC App upgrade | 2w | 2009-11-02 | 2009-11-16 | 131 |  |  |  |  |  | 1d | 0d | Ray | 80h |  |
| 160 | 1.4.6.2 | IO SVMC App upgrading | 1w | 2009-11-16 | 2009-11-23 | 159 |  |  |  |  |  | 1d | 0d | Ray | 40h |  |
| 161 | 1.4.6.3 | VMC App upgrade by USB stick/SD card | 1w | 2009-11-23 | 2009-11-30 | 160 |  |  |  |  |  | 1d | 0d | Ray | 40h |  |
| 162 | 1.4.6.4 | Configuration file upgrade(mdf/menu/parameter) | 1w | 2009-11-30 | 2009-12-07 | 161 |  |  |  |  |  | 1d | 0d | Ray | 40h |  |
| 163 | 1.4.6.5 | backup/clone all machine setting | 1w | 2009-12-07 | 2009-12-14 | 162 |  |  |  |  |  | 1d | 0d | Ray | 40h |  |
| 164 | 1.4.6.6 | Integration and release v3.0 | 1d | 2009-12-14 | 2009-12-15 | 163 |  |  |  |  |  | 1d | 0d | Ray | 8h |  |
| 165 | 1.4.6.7 | SL1000 CUP App upgrading | 3d | 2009-12-15 | 2009-12-18 | 164 |  |  |  |  |  | 39d | 0d |  |  |  |
| 166 | 1.4.6.8 | GFV App upgrading | 8d | 2009-12-18 | 2009-12-30 | 165 |  |  |  |  |  | 39d | 0d |  |  |  |
| 167 | 1.4.6.9 | Integraion and release v4.0 | 1d | 2009-12-30 | 2009-12-31 | 166 |  |  |  |  |  | 39d |  |  |  |  |

Notes:
- 148: To be confirmed if necessary for 1st stage??

| ID | WBS | Task | Duration | Start | Finish | Predecessors | Baseline start | Baseline finish | Baseline duration | Total slack | Free slack | Constraint | Resources | Work |
| --- | --- | --- | --- | --- | --- | --- | --- | --- | --- | --- | --- | --- | --- | --- |
| 168 | 1.4.7 | **GVMC for shop GFV/F9** | 95d | 2009-08-10 | 2009-12-18 |  |  |  |  | 47.12d |  |  | TBD1 | 760h |
| 169 | 1.4.7.1 | Analyze/test GFV bus | 1w | 2009-08-10 | 2009-08-14 |  |  |  |  | 47.12d | 0d | start no earlier than 2009-08-10 |  |  |
| 170 | 1.4.7.2 | Implement new bus compatible SL and GFV | 1w | 2009-08-17 | 2009-08-21 | 169 |  |  |  | 47.12d | 0d |  |  |  |
| 171 | 1.4.7.3 | Implement GFV components' action | 3w | 2009-08-24 | 2009-09-11 | 170 |  |  |  | 47.12d | 0d |  |  |  |
| 172 | 1.4.7.4 | add shop machine class in machineMgr | 1w | 2009-09-14 | 2009-09-18 | 171 |  |  |  | 47.12d | 0d |  |  |  |
| 173 | 1.4.7.5 | shop product management module | 2w | 2009-09-21 | 2009-10-02 | 172 |  |  |  | 47.12d | 0d |  |  |  |
| 174 | 1.4.7.6 | Shop vend UI | 6w | 2009-10-05 | 2009-11-13 | 173 |  |  |  | 47.12d | 0d |  |  |  |
| 175 | 1.4.7.7 | Shop operator UI | 4w | 2009-11-16 | 2009-12-11 | 174 |  |  |  | 47.12d | 0d |  |  |  |
| 176 | 1.4.7.8 | Service tool support for COM30 and GFV | 1w | 2009-12-14 | 2009-12-18 | 175 |  |  |  | 47.12d |  |  |  |  |
| 177 | 6.1 | **IO SVMC on RTXC OS** | 107d | 2009-08-03 | 2009-12-29 |  | 2007-07-02 | 2008-09-19 | 309d | 10.12d |  |  |  | 1888h |
| 178 | 1.10.2.3 | **General IO components** | 51d | 2009-08-03 | 2009-10-12 |  | 2007-12-11 | 2008-02-28 | 54d | 10.12d |  |  |  | 752h |
| 179 | 1.5.1.1 | **Brewer** | 38d | 2009-08-03 | 2009-09-23 |  |  |  |  | 10.12d |  |  |  | 344h |
| 180 | 1.10.2.3.1 | SL ES brewer integration and test | 10d | 2009-08-03 | 2009-08-14 |  | 2007-12-11 | 2007-12-13 | 3d | 10.12d | 0d | start no earlier than 2009-08-03 | Hard Li | 80h |
| 181 | 1.5.1.1.2 | **SL15 ES brewer** | 17d | 2009-08-17 | 2009-09-08 |  |  |  |  | 10.12d |  |  | Hard Li | 136h |
| 182 | 1.5.1.1.2.1 | Brewer components update | 5d | 2009-08-17 | 2009-08-21 | 180 |  |  |  | 10.12d | 0d |  |  |  |
| 183 | 1.5.1.1.2.2 | New mockup test | 5d | 2009-08-24 | 2009-08-28 | 182 |  |  |  | 10.12d | 0d |  |  |  |
| 184 | 1.5.1.1.2.3 | Brewer heating algorithm | 3d | 2009-09-04 | 2009-09-08 | 195 |  |  |  | 10.12d | 0d |  |  |  |
| 185 | 1.5.1.1.3 | **SL15 Fresh brewer** | 16d | 2009-08-26 | 2009-09-16 |  |  |  |  | 85.12d |  |  | Peter | 128h |
| 186 | 1.5.1.1.3.1 | Mockup test function | 5d | 2009-08-26 | 2009-09-01 | 262 |  |  |  | 85.12d | 0d |  |  |  |
| 187 | 1.5.1.1.3.2 | Fresh brewer component implementation | 8d | 2009-09-02 | 2009-09-11 | 186 |  |  |  | 85.12d | 0d |  |  |  |
| 188 | 1.5.1.1.3.3 | Air pump component implementation | 3d | 2009-09-14 | 2009-09-16 | 187 |  |  |  | 85.12d | 0d |  |  |  |
| 189 | 1.5.1.1.4 | SL Mono brewer componnet integration | 5d | 2009-09-17 | 2009-09-23 | 188 |  |  |  | 85.12d | 0d |  |  |  |
| 190 | 1.5.1.2 | **Instant Container** | 13d | 2009-08-31 | 2009-09-16 |  |  |  |  | 114.12d |  |  | Lewis | 104h |
| 191 | 1.10.2.3.2 | New container EMK dosage and calibration | 5d | 2009-08-31 | 2009-09-04 |  | 2007-12-14 | 2007-12-20 | 5d | 114.12d | 0d | start no earlier than 2009-08-31 |  |  |
| 192 | 1.5.1.2.2 | New container heating | 3d | 2009-09-07 | 2009-09-09 | 191 |  |  |  | 114.12d | 0d |  |  |  |
| 193 | 1.5.1.2.3 | Container volume monitoring(counter) | 5d | 2009-09-10 | 2009-09-16 | 192 |  |  |  | 114.12d |  |  |  |  |

Notes:
- 168: BUS, shop vending, shop UI for new SL1000ES

| ID | WBS | Task | Duration | Start | Finish | Predecessors | Baseline start | Baseline finish | Baseline duration | Total slack | Free slack | Resources | Work |
| --- | --- | --- | --- | --- | --- | --- | --- | --- | --- | --- | --- | --- | --- |
| 194 | 1.5.1.3 | **Ceramic valve** | 8d | 2009-08-31 | 2009-09-09 |  |  |  |  | 10.12d |  | Hard Li | 64h |
| 195 | 1.10.2.3.9 | Single disk ceramic valve component | 4d | 2009-08-31 | 2009-09-03 | 183 | 2008-01-18 | 2008-01-22 | 3d | 10.12d | 0d |  |  |
| 196 | 1.5.1.3.2 | New component in MDF | 1d | 2009-09-04 | 2009-09-04 | 195 |  |  |  | 119.12d | 0d |  |  |
| 197 | 1.5.1.3.3 | Mockup life testing software | 3d | 2009-09-07 | 2009-09-09 | 196 |  |  |  | 119.12d |  |  |  |
| 198 | 1.5.1.4 | **Hot water system** | 9d | 2009-09-09 | 2009-09-21 |  |  |  |  | 10.12d |  | Hard Li | 72h |
| 199 | 1.5.1.4.1 | boiler heating algorithm improvement | 3d | 2009-09-09 | 2009-09-11 | 184 |  |  |  | 10.12d | 0d |  |  |
| 200 | 1.5.1.4.2 | volume control | 1d | 2009-09-14 | 2009-09-14 | 199 |  |  |  | 10.12d | 0d |  |  |
| 201 | 1.5.1.4.3 | steam boiler | 5d | 2009-09-15 | 2009-09-21 | 200 |  |  |  | 10.12d | 0d |  |  |
| 202 | 1.10.2.3.10 | **Grinder and bean container** | 4d | 2009-09-04 | 2009-09-09 |  | 2008-01-23 | 2008-01-29 | 5d | 92.12d |  | Lewis | 32h |
| 203 | 1.5.1.5.1 | Volume control | 2d | 2009-09-04 | 2009-09-07 | 195 |  |  |  | 95.12d | 0d |  |  |
| 204 | 1.5.1.5.2 | Bean status check by IR sensor | 2d | 2009-09-08 | 2009-09-09 | 203 |  |  |  | 95.12d | 0d |  |  |
| 205 | 1.10.2.3.11 | Mixer mockup test | 2d | 2009-09-10 | 2009-09-11 | 204 | 2008-01-30 | 2008-01-31 | 2d | 95.12d | 0d | Lewis | 16h |
| 206 | 1.5.1.7 | Integration and release v1.0 | 1d | 2009-09-24 | 2009-09-24 | 205, 189 |  |  |  | 108.12d | 0d |  |  |
| 207 | 1.10.2.3.14 | Fresh milk system(WMF presto) | 3w | 2009-09-22 | 2009-10-12 | 201 | 2008-02-15 | 2008-02-21 | 5d | 10.12d | 0d | Hard Li | 120h |
| 208 | 1.10.2.3.12 | **New SL1000ES IO components** | 24d | 2009-09-14 | 2009-10-15 |  | 2008-02-01 | 2008-02-02 | 2d | 92.12d |  |  | 168h |
| 209 | 1.5.2.1 | **SL1000 container with seesaw** | 5d | 2009-09-14 | 2009-09-18 |  |  |  |  | 92.12d |  | Lewis | 40h |
| 210 | 1.5.2.1.1 | new container component | 3d | 2009-09-14 | 2009-09-16 | 205 |  |  |  | 92.12d | 0d |  |  |
| 211 | 1.5.2.1.2 | new Component in MDF | 2d | 2009-09-17 | 2009-09-18 | 210 |  |  |  | 92.12d | 0d |  |  |
| 212 | 1.5.2.2 | **New SL1k CUP component** | 8d | 2009-09-24 | 2009-10-05 |  |  |  |  | 93.12d |  | Peter | 64h |
| 213 | 1.5.2.2.1 | Cup component | 3d | 2009-09-24 | 2009-09-28 | 189 |  |  |  | 93.12d | 0d |  |  |
| 214 | 1.5.2.2.2 | Dispener door and electronic door lock | 3d | 2009-09-29 | 2009-10-01 | 213 |  |  |  | 93.12d | 0d |  |  |
| 215 | 1.5.2.2.3 | Coin return | 2d | 2009-10-02 | 2009-10-05 | 214 |  |  |  | 93.12d | 0d |  |  |
| 216 | 1.5.2.3 | Stick component integration | 1w | 2009-10-06 | 2009-10-12 | 215 |  |  |  | 93.12d | 0d | Peter | 40h |
| 217 | 1.5.2.4 | New sugar container component | 3d | 2009-10-13 | 2009-10-15 | 216 |  |  |  | 93.12d |  | Peter | 24h |

| ID | WBS | Task | Duration | Start | Finish | Predecessors | Baseline start | Baseline finish | Baseline duration | Total slack | Free slack | Resources | Work |
| --- | --- | --- | --- | --- | --- | --- | --- | --- | --- | --- | --- | --- | --- |
| 218 | 1.5.3 | **SL15 5C ES IO components** | 31d | 2009-10-13 | 2009-11-24 |  |  |  |  | 10.12d |  |  | 88h |
| 219 | 1.10.2.3.13 | SL15 5C cooling improvement | 2w | 2009-10-13 | 2009-10-26 | 207 | 2008-02-03 | 2008-02-14 | 5d | 10.12d | 0d | Hard Li | 80h |
| 220 | 1.5.3.2 | Integration and release v2.0 | 1d | 2009-10-27 | 2009-10-27 | 219 |  |  |  | 10.12d | 0d | Hard Li | 8h |
| 221 | 1.5.3.3 | Cup system improvement | 3w | 2009-10-28 | 2009-11-17 | 220 |  |  |  | 65.12d | 0d |  |  |
| 222 | 1.5.3.4 | stick system | 1w | 2009-11-18 | 2009-11-24 | 221 |  |  |  | 65.12d |  |  |  |
| 223 | 1.10.2.4 | **VMC functions** | 33d | 2009-09-21 | 2009-11-04 |  | 2008-02-29 | 2008-05-06 | 46d | 33.12d |  |  | 256h |
| 224 | 1.5.4.1 | Components test function | 2w | 2009-09-21 | 2009-10-02 | 211 |  |  |  | 92.12d | 0d | Lewis | 80h |
| 225 | 1.5.4.2 | Componnet initialization | 1w | 2009-10-05 | 2009-10-09 | 224 |  |  |  | 92.12d | 0d | Lewis | 40h |
| 226 | 1.5.4.3 | Component interface improvement | 1w | 2009-10-20 | 2009-10-26 | 100 |  |  |  | 18.12d | 0d | Donald | 40h |
| 227 | 1.10.2.4.7 | Integration and Release v2.0 | 1d | 2009-10-27 | 2009-10-27 | 226 | 2008-05-05 | 2008-05-06 | 2d | 18.12d | 0d | Donald | 8h |
| 228 | 1.5.4.5 | standby and energy saving | 1w | 2009-10-12 | 2009-10-16 | 225 |  |  |  | 92.12d |  | Lewis | 40h |
| 229 | 1.5.4.6 | Volume counter and life statistics | 1w | 2009-10-28 | 2009-11-03 | 227 |  |  |  | 18.12d | 0d | Hard Li | 40h |
| 230 | 1.5.4.7 | Integration and release v.30 | 1d | 2009-11-04 | 2009-11-04 | 229 |  |  |  | 18.12d | 0d | Hard Li | 8h |
| 231 | 1.5.5 | **machine error handling improvement** | 33d | 2009-11-05 | 2009-12-21 |  |  |  |  | 6.12d |  | Donald | 264h |
| 232 | 1.5.5.1 | analyse | 1w | 2009-11-05 | 2009-11-11 | 230 |  |  |  | 6.12d | 0d |  |  |
| 233 | 1.5.5.2 | components get_gate_status | 2w | 2009-11-12 | 2009-11-25 | 232 |  |  |  | 6.12d | 0d |  |  |
| 234 | 1.5.5.3 | build tree gate status/storage support | 1w | 2009-11-26 | 2009-12-02 | 233 |  |  |  | 6.12d | 0d |  |  |
| 235 | 1.5.5.4 | recoverable error | 3d | 2009-12-03 | 2009-12-07 | 234 |  |  |  | 6.12d | 0d |  |  |
| 236 | 1.5.5.5 | fatal error | 3d | 2009-12-08 | 2009-12-10 | 235 |  |  |  | 6.12d | 0d |  |  |
| 237 | 1.5.5.6 | vend state/Machine support <product available> | 4d | 2009-12-11 | 2009-12-16 | 236 |  |  |  | 6.12d | 0d |  |  |
| 238 | 1.5.5.7 | ingredient fill detection(proximity sensor) | 2d | 2009-12-17 | 2009-12-18 | 237 |  |  |  | 6.12d | 0d |  |  |
| 239 | 1.5.5.8 | Integration and Release v3.0 | 1d | 2009-12-21 | 2009-12-21 | 238 |  |  |  | 6.12d | 0d |  |  |
| 240 | 1.10.2.5 | **Cleaning programs** | 35d | 2009-10-28 | 2009-12-15 |  | 2008-05-12 | 2008-07-11 | 44d | 10.12d |  | Hard Li | 280h |
| 241 | 1.5.6.1 | Brewer cleaning program | 7d | 2009-10-28 | 2009-11-05 | 220 |  |  |  | 10.12d | 0d |  |  |
| 242 | 1.5.6.2 | Hot-Flush program(every day) | 1w | 2009-11-06 | 2009-11-12 | 241 |  |  |  | 10.12d | 0d |  |  |
| 243 | 1.5.6.3 | Rising program to remove bacteria(2wk period) | 7d | 2009-11-13 | 2009-11-23 | 242 |  |  |  | 10.12d | 0d |  |  |
| 244 | 1.5.6.4 | Descale program for hot water sytem(half-year period) | 2w | 2009-11-24 | 2009-12-07 | 243 |  |  |  | 10.12d | 0d |  |  |
| 245 | 1.5.6.5 | Tree building for cleaning program | 1w | 2009-12-08 | 2009-12-14 | 244 |  |  |  | 10.12d | 0d |  |  |
| 246 | 1.5.6.6 | Integration and Release v3.0 | 1d | 2009-12-15 | 2009-12-15 | 245 |  |  |  | 10.12d | 0d |  |  |

| ID | WBS | Task | Duration | Start | Finish | Predecessors | Complete | Remaining | Baseline start | Baseline finish | Baseline duration | Total slack | Free slack | Resources | Work | Actual work |
| --- | --- | --- | --- | --- | --- | --- | --- | --- | --- | --- | --- | --- | --- | --- | --- | --- |
| 247 | 1.10.2.6 | **Bootloader** | 10d | 2009-12-16 | 2009-12-29 |  |  |  | 2008-07-14 | 2008-09-09 | 42d | 40.12d |  | Jerry | 80h |  |
| 248 | 1.10.2.6.1 | IO boot with BUS and upgrading | 5d | 2009-12-16 | 2009-12-22 | 246 |  |  | 2008-07-14 | 2008-08-22 | 30d | 40.12d | 0d |  |  |  |
| 249 | 1.5.7.2 | Cup boot with BUS and upgrading | 5d | 2009-12-23 | 2009-12-29 | 248 |  |  |  |  |  | 40.12d |  |  |  |  |
| 250 | 6.5 | **CUP system application** | 85d | 2009-07-01 | 2009-10-27 |  |  |  | 2007-10-22 | 2008-09-24 | 235d | 85.12d |  |  | 680h |  |
| 251 | 1.10.6.2 | **SL15 FS CUP bottom-up** | 19d | 2009-07-01 | 2009-07-27 |  |  |  | 2008-02-20 | 2008-03-14 | 18d | 85.12d |  | Peter | 152h |  |
| 252 | 1.10.6.2.1 | Study existing Cup system | 5d | 2009-07-01 | 2009-07-07 |  |  |  | 2008-02-20 | 2008-02-22 | 3d | 85.12d | 0d |  |  |  |
| 253 | 1.10.6.2.2 | Design cup moving control functions | 5d | 2009-07-08 | 2009-07-14 | 252 |  |  | 2008-02-25 | 2008-02-26 | 2d | 85.12d | 0d |  |  |  |
| 254 | 1.10.6.2.3 | Design catcher control functions | 5d | 2009-07-15 | 2009-07-21 | 253 |  |  | 2008-02-27 | 2008-03-11 | 10d | 85.12d | 0d |  |  |  |
| 255 | 1.6.1.4 | Mockup test | 3d | 2009-07-22 | 2009-07-24 | 254 |  |  |  |  |  | 85.12d | 0d |  |  |  |
| 256 | 1.6.1.5 | Test report | 1d | 2009-07-27 | 2009-07-27 | 255 |  |  |  |  |  | 85.12d | 0d |  |  |  |
| 257 | 1.10.6.1 | **SL1000ES Cup system** | 56d | 2009-07-28 | 2009-10-13 |  |  |  | 2007-10-22 | 2007-12-07 | 35d | 85.12d |  | Peter | 448h |  |
| 258 | 1.6.2.1 | Cup system structure | 1w | 2009-07-28 | 2009-08-03 | 256 |  |  |  |  |  | 85.12d | 0d |  |  |  |
| 259 | 1.10.6.1.1 | Design motor driver | 3d | 2009-08-04 | 2009-08-06 | 258 |  |  | 2007-10-22 | 2007-10-26 | 5d | 85.12d | 0d |  |  |  |
| 260 | 1.6.2.3 | Porting SL 485 BUS | 3d | 2009-08-07 | 2009-08-11 | 259 |  |  |  |  |  | 85.12d | 0d |  |  |  |
| 261 | 1.10.6.1.2 | Implement test functions for cup movement | 1w | 2009-08-12 | 2009-08-18 | 260 |  |  | 2007-10-29 | 2007-11-02 | 5d | 85.12d | 0d |  |  |  |
| 262 | 1.6.2.5 | Cup control application | 1w | 2009-08-19 | 2009-08-25 | 261 |  |  |  |  |  | 85.12d | 0d |  |  |  |
| 263 | 1.10.6.1.3 | stick system | 3d | 2009-09-24 | 2009-09-28 | 189 |  |  | 2007-11-05 | 2007-11-23 | 15d | 85.12d | 0d |  |  |  |
| 264 | 1.10.6.1.4 | Sugar dispenser | 3d | 2009-09-29 | 2009-10-01 | 263 |  |  | 2007-11-26 | 2007-11-30 | 5d | 85.12d | 0d |  |  |  |
| 265 | 1.10.6.1.5 | Dispensor door | 1w | 2009-10-02 | 2009-10-08 | 264 |  |  | 2007-11-26 | 2007-12-07 | 10d | 85.12d | 0d |  |  |  |
| 266 | 1.6.2.9 | Coin return function | 3d | 2009-10-09 | 2009-10-13 | 265 |  |  |  |  |  | 85.12d | 0d |  |  |  |
| 267 | 1.10.6.2 | **Cup system for new software platform** | 10d | 2009-10-14 | 2009-10-27 |  |  |  | 2008-02-20 | 2008-03-14 | 18d | 85.12d |  | Peter | 80h |  |
| 268 | 1.10.6.2.2 | Integrate new SL15 485 BUS | 4d | 2009-10-14 | 2009-10-19 | 266 |  |  | 2008-02-25 | 2008-02-26 | 2d | 85.12d | 0d |  |  |  |
| 269 | 1.10.6.2.3 | Test cup application with WinCE board | 6d | 2009-10-20 | 2009-10-27 | 268 |  |  | 2008-02-27 | 2008-03-11 | 10d | 85.12d |  |  |  |  |
| 270 | 1.10.8 | **Vending service tools** | 135d | 2009-06-05 A | 2009-12-11 |  | 27% | 98.55d | 2008-07-03 | 2008-10-28 | 80d | 53d |  |  | 1256h | 457.63h |
| 271 | 1.7.1 | **Machine designer(MDF editor)** | 7d | 2009-09-16 | 2009-09-25 |  |  |  |  |  |  | 0d |  | william | 56h |  |
| 272 | 1.7.1.1 | New components for SL15 4C | 3d | 2009-09-16 | 2009-09-21 | 287 |  |  |  |  |  | 0d |  |  |  |  |
| 273 | 1.7.1.2 | New components for new SL1000ES | 3d | 2009-09-21 | 2009-09-24 | 272 |  |  |  |  |  | 0d |  |  |  |  |
| 274 | 1.7.1.3 | Integration and release v1.0 | 1d | 2009-09-24 | 2009-09-25 | 273 |  |  |  |  |  | 0d |  |  |  |  |

| ID | WBS | Task | Type | Duration | Start | Finish | Predecessors | Complete | Remaining | Baseline start | Baseline finish | Baseline duration | Total slack | Free slack | Resources | Work | Actual work |
| --- | --- | --- | --- | --- | --- | --- | --- | --- | --- | --- | --- | --- | --- | --- | --- | --- | --- |
| 275 | 1.7.2 | **Service tool** |  | 125d | 2009-06-05 A | 2009-11-27 |  | 46% | 67.8d |  |  |  | 53d |  | william | 1000h | 457.63h |
| 276 | 1.7.2.1 | framework using QT |  | 6d | 2009-06-05 A | 2009-06-15 A |  | 100% |  |  |  |  |  |  |  |  |  |
| 277 | 1.7.2.2 | Bus connection |  | 3d | 2009-06-15 A | 2009-06-18 A | 276 | 100% |  |  |  |  |  |  |  |  |  |
| 278 | 1.7.2.3 | component adjustment |  | 10d | 2009-06-18 A | 2009-07-02 A | 277 | 100% |  |  |  |  |  |  |  |  |  |
| 279 | 1.7.2.4 | component test function/report |  | 7d | 2009-07-02 A | 2009-07-13 A | 278 | 100% |  |  |  |  |  |  |  |  |  |
| 280 | 1.7.2.5 | product prepareration,recipe,test |  | 8d | 2009-07-13 A | 2009-07-23 A | 279 | 100% |  |  |  |  |  |  |  |  |  |
| 281 | 1.7.2.6 | [adjustment editor function done] | milestone | 0d | 2009-07-23 A | 2009-07-23 A | 280 | 100% |  |  |  |  |  |  |  |  |  |
| 282 | 1.7.2.7 | UI improvement |  | 14d | 2009-07-23 A | 2009-08-12 A | 281 | 100% |  |  |  |  |  |  |  |  |  |
| 283 | 1.7.2.8 | sync configuration files with main board |  | 6d | 2009-08-12 A | 2009-08-20 A | 282 | 100% |  |  |  |  |  |  |  |  |  |
| 284 | 1.7.2.9 | IO board disconnect/reconnect |  | 3d | 2009-08-20 | 2009-08-25 | 283 |  |  |  |  |  | 0d |  |  |  |  |
| 285 | 1.7.2.10 | calibration/dosage integrate UI |  | 10d | 2009-08-25 | 2009-09-08 | 284 |  |  |  |  |  | 0d |  |  |  |  |
| 286 | 1.7.2.11 | Payment device control |  | 1w | 2009-09-08 | 2009-09-15 | 285 |  |  |  |  |  | 0d |  |  |  |  |
| 287 | 1.7.2.12 | Integration and release v1.0 |  | 1d | 2009-09-15 | 2009-09-16 | 286 |  |  |  |  |  | 0d |  |  |  |  |
| 288 | 1.7.2.13 | Back office control |  | 1w | 2009-09-25 | 2009-10-02 | 274 |  |  |  |  |  | 0d |  |  |  |  |
| 289 | 1.7.2.14 | privilege configuration |  | 1w | 2009-10-02 | 2009-10-09 | 288 |  |  |  |  |  | 0d |  |  |  |  |
| 290 | 1.7.2.15 | Integration and release v2.0 |  | 1d | 2009-10-09 | 2009-10-12 | 289 |  |  |  |  |  | 0d |  |  |  |  |
| 291 | 1.7.2.16 | software upgrading support |  | 4d | 2009-10-12 | 2009-10-16 | 290 |  |  |  |  |  | 53d | 0d |  |  |  |
| 292 | 1.7.2.17 | Clock functions |  | 1w | 2009-10-16 | 2009-10-23 | 291 |  |  |  |  |  | 53d | 0d |  |  |  |
| 293 | 1.7.2.18 | miscellanous |  | 2w | 2009-10-23 | 2009-11-06 | 292 |  |  |  |  |  | 53d | 0d |  |  |  |
| 294 | 1.7.2.19 | Service tool graphic UI upgrading |  | 2w | 2009-11-06 | 2009-11-20 | 293 |  |  |  |  |  | 53d | 0d |  |  |  |
| 295 | 1.7.2.20 | Bug fixing and release v3.0 |  | 5d | 2009-11-20 | 2009-11-27 | 294 |  |  |  |  |  | 53d | 0d |  |  |  |
| 296 | 1.7.3 | menu builder and configuration |  | 3w | 2009-11-18 | 2009-12-09 | 157 |  |  |  |  |  | 54.5d |  | Van | 120h |  |
| 297 | 1.7.4 | Service tool privilege editor |  | 2w | 2009-11-27 | 2009-12-11 | 295 |  |  |  |  |  | 53d | 0d | william | 80h |  |
| 298 | 1.10.8.6 | BOS application on PDA |  | 2w | 2009-07-01 | 2009-07-14 |  |  |  | 2008-08-27 | 2008-10-13 | 30d | 160.12d |  |  |  |  |
| 299 | 1.10.8.4 | Vending Management system |  | 8w | 2009-07-13 | 2009-09-04 | 304 |  |  | 2008-07-24 | 2008-09-18 | 40d | 122.12d |  |  |  |  |

Notes:
- 278: william day off for 3 days
- 282: �css/ �change tree view control/ �apply button etc.
- 283: �add config xml to build Machine / �MachineMgr create machine using xml / �copy mdf,recipe2.dat,useradj2.dat and config xml when connect
- 289: a privilege config tool is needed

| ID | WBS | Task | Duration | Start | Finish | Baseline start | Baseline finish | Baseline duration | Total slack | Free slack | Resources | Work |
| --- | --- | --- | --- | --- | --- | --- | --- | --- | --- | --- | --- | --- |
| 300 | 1.10.7 | **PCBA Industrialization FVT firmware** | 10d | 2009-07-01 | 2009-07-14 | 2008-06-26 | 2008-09-08 | 53d | 122.12d |  |  | 224h |
| 301 | 1.10.7.1 | Main board 75600 FVT firmware | 2w | 2009-07-01 | 2009-07-14 | 2008-06-26 | 2008-07-16 | 15d | 160.12d |  | Alan | 80h |
| 302 | 1.10.7.2 | IO board 75468 FVT firmware | 5d | 2009-07-01 | 2009-07-07 | 2008-07-17 | 2008-07-30 | 10d | 165.12d |  | Lewis | 40h |
| 303 | 1.10.7.3 | Cup system board 75602 FVT firmware | 5d | 2009-07-01 | 2009-07-07 | 2008-07-31 | 2008-08-08 | 7d | 165.12d |  | Jerry | 40h |
| 304 | 1.10.7.4 | PC FVT program | 8d | 2009-07-01 | 2009-07-10 | 2008-08-26 | 2008-09-08 | 10d | 122.12d | 0d | Van | 64h |
