# gvmc

Schedule from MS Project, 2008-11-26 to 2009-12-23, A marks actual dates.
Maas International

## Calendars

- Standard: Mon-Fri 08:00-12:00, 13:00-17:00; Sat-Sun off. Exceptions (off unless hours are given): 2009-01-26 to 2009-01-30, 2009-09-27 08:00-12:00, 13:00-17:00, 2009-10-01 to 2009-10-02, 2009-10-05 to 2009-10-08, 2009-10-10 08:00-12:00, 13:00-17:00.

## Resources

| Resource |
| --- |
| william |
| van |
| ray |
| donald |
| lewis |
| jerry |
| hard |
| aden |

## Schedule

| ID | WBS | Task | Type | Duration | Start | Finish | Predecessors | Complete | Remaining | Total slack | Free slack | Constraint | Resources | Work | Actual work |
| --- | --- | --- | --- | --- | --- | --- | --- | --- | --- | --- | --- | --- | --- | --- | --- |
| 2 | 1 | **BackOffice** |  | 81.5d? | 2009-07-01 A | 2009-10-28 |  | 64% | 29.3d? | 39.5d |  |  |  | 1036h | 349.25h |
| 3 | 1.1 | **BOS** |  | 81.5d? | 2009-07-01 A | 2009-10-28 |  | 65% | 28.15d? | 39.5d |  |  | van | 652h | 107.16h |
| 4 | 1.1.1 | BOSAdm |  | 7d | 2009-07-01 A | 2009-07-10 |  | 80% | 1.4d | 118d |  | start no earlier than 2009-07-01 |  |  |  |
| 5 | 1.1.2 | BOSAdmBuffer |  | 4d | 2009-07-10 A | 2009-07-16 A | 4 | 100% |  |  |  |  |  |  |  |
| 6 | 1.1.3 | BOSMutProcessor/BOSOpnProcessor |  | 3d | 2009-07-16 A | 2009-07-21 A | 5 | 100% |  |  |  |  |  |  |  |
| 7 | 1.1.4 | opn,mut data unit test |  | 6d | 2009-07-21 A | 2009-07-29 A | 6 | 100% |  |  |  |  |  |  |  |
| 8 | 1.1.5 | AdmMgr |  | 3d | 2009-07-29 A | 2009-08-06 A | 7 | 100% |  |  |  |  |  |  |  |
| 9 | 1.1.6 | BOS Bus |  | 5d? | 2009-10-14 | 2009-10-21 | 11 |  |  | 39.5d | 0d |  |  |  |  |
| 10 | 1.1.7 | COM30 |  | 5d? | 2009-10-21 | 2009-10-28 | 9 |  |  | 39.5d |  |  |  |  |  |
| 11 | 1.2 | **EVA** |  | 48d | 2009-08-03 A | 2009-10-14 |  | 63% | 17.74d | 39.5d | 0d |  | van | 384h | 242.09h |
| 12 | 1.2.1 | EVAAdm |  | 2d | 2009-08-03 A | 2009-08-05 A | 8 | 100% |  |  |  |  |  |  |  |
| 13 | 1.2.2 | anaylse |  | 2d | 2009-08-05 A | 2009-08-07 A | 12 | 100% |  |  |  |  |  |  |  |
| 14 | 1.2.3 | implementation |  | 5d | 2009-08-07 A | 2009-08-14 A | 13 | 100% |  |  |  |  |  |  |  |
| 15 | 1.2.4 | ddcmp |  | 4w | 2009-08-14 A | 2009-09-11 A | 14 | 100% |  |  |  |  |  |  |  |
| 16 | 1.2.5 | EVA Bus |  | 7d | 2009-09-15 | 2009-09-24 | 103 |  |  | 39.5d | 0d |  |  |  |  |
| 17 | 1.2.6 | EVA 6.1 support |  | 2w | 2009-09-24 | 2009-10-14 | 16 |  |  | 39.5d |  |  |  |  |  |
| 19 | 2 | **Tools** |  | 98d? | 2009-06-05 A | 2009-10-27 |  | 80% | 20d? | 5d |  |  |  | 784h | 624h |
| 20 | 2.1 | **Service tool** |  | 98d? | 2009-06-05 A | 2009-10-27 |  | 80% | 20d? | 5d |  |  | william | 784h | 624h |
| 21 | 2.1.1 | framework using QT |  | 6d | 2009-06-05 A | 2009-06-15 A |  | 100% |  |  |  |  |  |  |  |
| 22 | 2.1.2 | Bus connection |  | 3d | 2009-06-15 A | 2009-06-18 A | 21 | 100% |  |  |  |  |  |  |  |
| 23 | 2.1.3 | component adjustment |  | 10d | 2009-06-18 A | 2009-07-02 A | 22 | 100% |  |  |  |  |  |  |  |
| 24 | 2.1.4 | component test function/report |  | 7d | 2009-07-02 A | 2009-07-13 A | 23 | 100% |  |  |  |  |  |  |  |
| 25 | 2.1.5 | product prepareration,recipe,test |  | 8d | 2009-07-13 A | 2009-07-23 A | 24 | 100% |  |  |  |  |  |  |  |
| 26 | 2.1.6 | [adjustment editor function done] | milestone | 0d | 2009-07-23 A | 2009-07-23 A | 25 | 100% |  |  |  |  |  |  |  |
| 27 | 2.1.7 | UI improvement |  | 14d | 2009-07-23 A | 2009-08-12 A | 26 | 100% |  |  |  |  |  |  |  |
| 28 | 2.1.8 | sync configuration files with main board |  | 6d | 2009-08-12 A | 2009-08-20 A | 27 | 100% |  |  |  |  |  |  |  |
| 29 | 2.1.9 | IO board disconnect/reconnect |  | 5d | 2009-08-20 A | 2009-08-27 A | 28 | 100% |  |  |  |  |  |  |  |
| 30 | 2.1.10 | calibration/dosage integrate UI |  | 4d | 2009-08-27 A | 2009-09-02 A | 29 | 100% |  |  |  |  |  |  |  |
| 31 | 2.1.11 | Back office control |  | 3w | 2009-09-02 A | 2009-09-23 A | 30 | 100% |  |  |  |  |  |  |  |
| 32 | 2.1.12 | Payment device control |  | 1w? | 2009-09-23 | 2009-09-29 | 31 |  |  | 5d | 0d |  |  |  |  |
| 33 | 2.1.13 | Clock functions |  | 1w? | 2009-09-29 | 2009-10-13 | 32 |  |  | 5d | 0d |  |  |  |  |
| 34 | 2.1.14 | miscellanous |  | 2w? | 2009-10-13 | 2009-10-27 | 33 |  |  | 5d | 0d |  |  |  |  |

Notes:
- 23: william day off for 3 days
- 27: �css/ �change tree view control/ �apply button etc.
- 28: �add config xml to build Machine / �MachineMgr create machine using xml / �copy mdf,recipe2.dat,useradj2.dat and config xml when connect

| ID | WBS | Task | Duration | Start | Finish | Predecessors | Complete | Remaining | Total slack | Constraint | Resources | Work | Actual work |
| --- | --- | --- | --- | --- | --- | --- | --- | --- | --- | --- | --- | --- | --- |
| 36 | 3 | **Credit** | 246d? | 2008-11-26 A | 2009-11-18 |  | 72% | 68.77d? | 0d |  | ray | 1968h | 1417.81h |
| 37 | 3.1 | MDB test | 16d | 2008-11-26 A | 2008-12-18 A |  | 100% |  |  |  |  |  |  |
| 38 | 3.2 | CreditMgr | 40d | 2009-01-05 A | 2009-03-09 A | 75 | 100% |  |  |  |  |  |  |
| 39 | 3.3 | Changer | 25d | 2009-04-20 A | 2009-05-25 A | 77 | 100% |  |  |  |  |  |  |
| 40 | 3.4 | MDBCashless test | 8d | 2009-07-02 A | 2009-07-14 A | 78 | 100% |  |  |  |  |  |  |
| 41 | 3.5 | IPayment->CardDevice | 4d | 2009-07-14 A | 2009-07-20 A | 40 | 100% |  |  |  |  |  |  |
| 42 | 3.6 | CreditMgr Single Payment switch Cash/Card | 2d | 2009-07-21 A | 2009-07-23 A | 41 | 100% |  |  |  |  |  |  |
| 43 | 3.7 | CreditMgr Overpay Limit | 1d | 2009-07-22 A | 2009-07-23 A | 42 | 100% |  |  |  |  |  |  |
| 44 | 3.8 | Vend process with card | 1w | 2009-07-30 A | 2009-08-06 A | 43 | 100% |  |  |  |  |  |  |
| 45 | 3.9 | Card detail requirment(template) | 7d | 2009-08-06 A | 2009-08-17 A | 44 | 100% |  |  |  |  |  |  |
| 46 | 3.10 | Credit/Payment document | 3d | 2009-08-17 A | 2009-08-20 A | 45 | 100% |  |  |  |  |  |  |
| 47 | 3.11 | error handle | 2d | 2009-08-20 A | 2009-08-24 A | 46 | 100% |  |  |  |  |  |  |
| 48 | 3.12 | direct Revalue/busy process | 4d | 2009-08-24 A | 2009-08-28 A | 47 | 100% |  |  |  |  |  |  |
| 49 | 3.13 | device display request | 1d | 2009-08-28 A | 2009-08-31 A | 48 | 100% |  |  |  |  |  |  |
| 50 | 3.14 | token payment | 2d | 2009-08-31 A | 2009-09-02 A | 49 | 100% |  |  | as late as possible |  |  |  |
| 51 | 3.15 | integrate with Adm | 9d | 2009-09-02 A | 2009-09-15 A | 50 | 100% |  |  |  |  |  |  |
| 52 | 3.16 | Vend token(price irrelevant) | 3d | 2009-09-15 A | 2009-09-18 A | 51 | 100% |  |  |  |  |  |  |
| 53 | 3.17 | revalue at return | 2d | 2009-09-18 A | 2009-09-22 A | 52 | 100% |  |  |  |  |  |  |
| 54 | 3.18 | MDB Set Date time | 2d | 2009-09-22 | 2009-09-24 | 53 |  |  | 0d |  |  |  |  |
| 55 | 3.19 | Overpay take in | 2d | 2009-09-24 | 2009-09-27 | 54 |  |  | 0d |  |  |  |  |
| 56 | 3.20 | Empty table | 2d | 2009-09-27 | 2009-09-29 | 55 |  |  | 0d |  |  |  |  |
| 57 | 3.21 | disable channel | 2d | 2009-09-29 | 2009-10-09 | 56 |  |  | 0d |  |  |  |  |
| 58 | 3.22 | CreditMgr reset | 2d | 2009-10-09 | 2009-10-12 | 57 |  |  | 0d |  |  |  |  |
| 59 | 3.23 | manual dispense | 2d | 2009-10-12 | 2009-10-14 | 58 |  |  | 0d |  |  |  |  |
| 60 | 3.24 | coin investment | 2d | 2009-10-14 | 2009-10-16 | 59 |  |  | 0d |  |  |  |  |
| 61 | 3.25 | Show channels | 2d | 2009-10-16 | 2009-10-20 | 60 |  |  | 0d |  |  |  |  |
| 62 | 3.26 | Tube count | 2d | 2009-10-20 | 2009-10-22 | 61 |  |  | 0d |  |  |  |  |
| 63 | 3.27 | Device info | 2d | 2009-10-22 | 2009-10-26 | 62 |  |  | 0d |  |  |  |  |
| 64 | 3.28 | MDB data entry | 2d | 2009-10-26 | 2009-10-28 | 63 |  |  | 0d |  |  |  |  |
| 65 | 3.29 | Mix payment | 1w | 2009-10-28 | 2009-11-04 | 64 |  |  | 0d |  |  |  |  |
| 66 | 3.30 | Open environment | 2d | 2009-11-04 | 2009-11-06 | 65 |  |  | 0d |  |  |  |  |
| 67 | 3.31 | Token payout | 2d | 2009-11-06 | 2009-11-10 | 66 |  |  | 0d |  |  |  |  |
| 68 | 3.32 | Card detail requirment(EU) | 1w | 2009-11-10 | 2009-11-17 | 67 |  |  | 0d |  |  |  |  |

Notes:
- 68: �Requirement for each card (more than 20 cards)/ �Mixpayment requirement

| ID | WBS | Task | Duration | Start | Finish | Predecessors | Complete | Remaining | Total slack | Free slack | Constraint | Resources | Work | Actual work |
| --- | --- | --- | --- | --- | --- | --- | --- | --- | --- | --- | --- | --- | --- | --- |
| 69 | 3.33 | **fault improvement( recoverable timeout)** | 1d? | 2009-11-17 | 2009-11-18 | 68 |  |  | 0d |  |  |  |  |  |
| 70 | 3.33.1 | Card language | 1d? | 2009-11-17 | 2009-11-18 |  |  |  | 0d |  |  |  |  |  |
| 71 | 3.34 | Bill Reader… | 3w | 2008-11-26 | 2008-12-17 |  |  |  | 231d |  |  |  |  |  |
| 73 | 4 | **UI** | 250d? | 2008-12-18 A | 2009-12-16 |  | 53% | 117.76d? | 5d |  |  |  | 1464h | 774.4h |
| 74 | 4.1 | **Vend UI** | 196d? | 2008-12-18 A | 2009-09-25 |  | 65% | 69.21d? | 59d |  |  |  | 1024h | 662.4h |
| 75 | 4.1.1 | Vend flow( requirment, flow chart) | 12d | 2008-12-18 A | 2009-01-05 A | 37 | 100% |  |  |  |  | ray | 96h | 96h |
| 76 | 4.1.2 | TestUI framework | 24d | 2009-01-05 A | 2009-02-13 A | 75 | 100% |  |  |  |  | ray | 192h | 192h |
| 77 | 4.1.3 | TestVendUI with payment | 30d | 2009-03-09 A | 2009-04-20 A | 38 | 100% |  |  |  |  | ray | 240h | 240h |
| 78 | 4.1.4 | VendUIQT | 28d | 2009-05-25 A | 2009-07-02 | 39 | 50% | 14d | 120d |  |  | ray | 224h | 112h |
| 79 | 4.1.5 | Optimize QT | 9d | 2009-08-10 A | 2009-08-21 |  | 31% | 6.2d | 59d | 0d | start no earlier than 2009-08-10 | aden | 72h | 22.4h |
| 80 | 4.1.6 | study venduiqt | 5d? | 2009-08-21 | 2009-08-28 | 79 |  |  | 59d | 0d |  | aden | 40h |  |
| 81 | 4.1.7 | vend ui with skin | 1w | 2009-08-28 | 2009-09-04 | 80 |  |  | 59d | 0d |  | aden | 40h |  |
| 82 | 4.1.8 | improve vending process | 2w? | 2009-09-04 | 2009-09-18 | 81 |  |  | 59d | 0d |  | aden | 80h |  |
| 83 | 4.1.9 | mutilanguage | 1w | 2009-09-18 | 2009-09-25 | 82 |  |  | 59d |  |  | aden | 40h |  |
| 85 | 4.2 | **Menu editor** | 19d | 2009-08-31 A | 2009-09-25 |  | 74% | 5d | 59d |  |  | aden | 152h | 112h |
| 86 | 4.2.1 | study mdf,qt,requirement | 3d | 2009-08-31 A | 2009-09-03 A |  | 100% |  |  |  | start no earlier than 2009-08-31 |  |  |  |
| 87 | 4.2.2 | config save/load | 3d | 2009-09-03 A | 2009-09-08 A | 86 | 100% |  |  |  |  |  |  |  |
| 88 | 4.2.3 | framework | 6d | 2009-09-08 A | 2009-09-16 A | 87 | 100% |  |  |  |  |  |  |  |
| 89 | 4.2.4 | load mdf | 2d | 2009-09-16 A | 2009-09-18 A | 88 | 100% |  |  |  |  |  |  |  |
| 90 | 4.2.5 | detail | 1w | 2009-09-18 | 2009-09-25 | 89 |  |  | 59d |  |  |  |  |  |
| 92 | 4.3 | **Operator UI** | 26d? | 2009-10-27 | 2009-12-02 | 34 |  |  | 5d | 0d |  | william | 208h |  |
| 93 | 4.3.1 | framework | 3d? | 2009-10-27 | 2009-10-30 |  |  |  | 5d | 0d |  |  |  |  |
| 94 | 4.3.2 | controls | 3d? | 2009-10-30 | 2009-11-04 | 93 |  |  | 5d | 0d |  |  |  |  |
| 95 | 4.3.3 | parameters | 1w? | 2009-11-04 | 2009-11-11 | 94 |  |  | 5d | 0d |  |  |  |  |
| 96 | 4.3.4 | statistics | 1w? | 2009-11-11 | 2009-11-18 | 95 |  |  | 5d | 0d |  |  |  |  |
| 97 | 4.3.5 | service | 1w? | 2009-11-18 | 2009-11-25 | 96 |  |  | 5d | 0d |  |  |  |  |
| 98 | 4.3.6 | utilities | 1w? | 2009-11-25 | 2009-12-02 | 97 |  |  | 5d |  |  |  |  |  |
| 100 | 4.4 | privilege editor | 2w | 2009-12-02 | 2009-12-16 | 92 |  |  | 5d |  |  | william | 80h |  |

Notes:
- 79: �cut qt (successfully build customized static/dynamic qt libs)/ �fixing debug problem(maybe 460 ram not enough problem)
- 100: a privilege config tool is needed

| ID | WBS | Task | Duration | Start | Finish | Predecessors | Complete | Remaining | Total slack | Free slack | Constraint | Resources | Work | Actual work |
| --- | --- | --- | --- | --- | --- | --- | --- | --- | --- | --- | --- | --- | --- | --- |
| 102 | 5 | **Thai char support for SL** | 11d? | 2009-09-11 A | 2009-09-27 | 15 | 55% | 5d? | 57.5d |  |  |  | 88h | 48h |
| 103 | 5.1 | Thai bitmap font program | 2d | 2009-09-11 A | 2009-09-15 A |  | 100% |  |  |  |  | van | 16h | 16h |
| 104 | 5.2 | Thai in SLWIN | 4d | 2009-09-15 A | 2009-09-21 A | 103 | 100% |  |  |  |  | donald | 32h | 32h |
| 105 | 5.3 | translation/integration | 1w? | 2009-09-21 | 2009-09-27 | 104 |  |  | 57.5d |  |  | lewis | 40h |  |
| 107 | 6 | **Functions** | 39.5d? | 2009-08-19 | 2009-10-19 |  |  |  | 46.5d |  |  |  | 360h |  |
| 108 | 6.1 | error handling | 3w | 2009-08-19 | 2009-09-09 |  |  |  | 61d | 0d | start no earlier than 2009-08-19 | donald | 120h |  |
| 109 | 6.2 | Jug support | 1w | 2009-09-09 | 2009-09-16 | 108 |  |  | 61d | 0d |  | donald | 40h |  |
| 110 | 6.3 | Relative dosage | 1w? | 2009-09-16 | 2009-09-23 | 109 |  |  | 61d |  |  | donald | 40h |  |
| 111 | 6.4 | statistic | 2w? | 2009-09-15 | 2009-09-28 | 103 |  |  | 46.5d | 0d |  | van | 80h |  |
| 112 | 6.5 | logger | 2w | 2009-09-28 | 2009-10-19 | 111 |  |  | 46.5d |  |  | van | 80h |  |
| 114 | 7 | **program update** | 25d | 2009-11-18 | 2009-12-23 | 36 |  |  | 0d |  |  | ray | 200h |  |
| 115 | 7.1 | service tool support | 1w | 2009-11-18 | 2009-11-25 |  |  |  | 0d |  |  |  |  |  |
| 116 | 7.2 | main board update | 1w | 2009-11-25 | 2009-12-02 | 115 |  |  | 0d |  |  |  |  |  |
| 117 | 7.3 | IO board update | 1w | 2009-12-02 | 2009-12-09 | 116 |  |  | 0d |  |  |  |  |  |
| 118 | 7.4 | cup board update | 1w | 2009-12-09 | 2009-12-16 | 117 |  |  | 0d |  |  |  |  |  |
| 119 | 7.5 | GFV program update | 1w | 2009-12-16 | 2009-12-23 | 118 |  |  | 0d |  |  |  |  |  |
