# svmc tasks

Schedule from MS Project, 2009-07-11 to 2009-11-09, A marks actual dates.
Maas International

## Calendars

- Standard: Mon-Fri 08:00-12:00, 13:00-17:00; Sat-Sun off. Exceptions (off unless hours are given): 2009-08-01 08:00-12:00, 13:00-17:00, 2009-10-31 08:00-12:00, 13:00-17:00.

## Resources

| Resource |
| --- |
| alan |
| donald |
| lewis |
| ray |
| TBD |
| william |
| hard |
| peter |
| jerry |

## Schedule

| ID | WBS | Task | Type | Duration | Start | Finish | Predecessors | Complete | Remaining | Total slack | Free slack | Constraint | Resources | Work | Actual work |
| --- | --- | --- | --- | --- | --- | --- | --- | --- | --- | --- | --- | --- | --- | --- | --- |
| 1 | 1 | **milestones** |  | 81d | 2009-07-13 | 2009-10-31 |  |  |  | 6d |  |  |  |  |  |
| 2 | 1.1 | schedule start | milestone | 0d | 2009-07-13 | 2009-07-13 |  |  |  | 81d |  |  |  |  |  |
| 3 | 1.2 | phase I (July) | milestone | 0d | 2009-07-31 | 2009-07-31 |  |  |  | 0d |  | must start on 2009-07-31 |  |  |  |
| 4 | 1.3 | phase II (Augest) | milestone | 0d | 2009-08-31 | 2009-08-31 |  |  |  | 0d |  | must start on 2009-08-31 |  |  |  |
| 5 | 1.4 | phase III (September) | milestone | 0d | 2009-09-30 | 2009-09-30 |  |  |  | 0d |  | must start on 2009-09-30 |  |  |  |
| 6 | 1.5 | phase IV (October) | milestone | 0d | 2009-10-31 | 2009-10-31 |  |  |  | 0d |  | must start on 2009-10-31 |  |  |  |
| 8 | 2 | **bug fixing** |  | 1d? | 2009-07-13 | 2009-07-14 |  |  |  | 86d |  |  |  |  |  |
| 9 | 2.1 | duration test halt |  | 1d? | 2009-07-13 | 2009-07-14 |  |  |  | 80d |  |  |  |  |  |
| 10 | 2.2 | boiler overheat |  | 1d? | 2009-07-13 | 2009-07-14 |  |  |  | 80d |  |  |  |  |  |
| 12 | 3 | **Key components** |  | 87d? | 2009-07-13 A | 2009-11-09 |  | 31% | 59.79d? | 0d |  |  |  | 2044h | 672.43h |
| 13 | 3.1 | **Brewer** |  | 46d | 2009-07-13 A | 2009-09-14 |  | 64% | 16.73d | 41d |  |  | hard [10%] | 60h | 52.73h |
| 14 | 3.1.1 | SL ES brewer |  | 2d | 2009-08-10 A | 2009-08-12 A |  | 100% |  |  |  | start no earlier than 2009-08-10 |  |  |  |
| 15 | 3.1.2 | SL mono brewer |  | 1w | 2009-09-07 A | 2009-09-14 A | 60 | 100% |  |  |  | start no earlier than 2009-09-07 | peter | 40h | 40h |
| 16 | 3.1.3 | **new ES brewer** |  | 4d | 2009-07-13 | 2009-07-17 |  |  |  | 83d |  |  |  |  |  |
| 17 | 3.1.3.1 | Brewer heating control |  | 2d | 2009-07-13 | 2009-07-15 |  |  |  | 83d | 0d |  |  |  |  |
| 18 | 3.1.3.2 | heating control with NTC |  | 2d | 2009-07-15 | 2009-07-17 | 17 |  |  | 83d |  |  |  |  |  |
| 19 | 3.2 | Mixer |  | 1d | 2009-07-13 | 2009-07-14 |  |  |  | 75.69d | 14d |  | lewis | 8h |  |
| 20 | 3.3 | **cannister** |  | 55d? | 2009-07-13 A | 2009-09-25 |  | 11% | 49.16d? | 32d |  |  |  | 320h | 35.7h |
| 21 | 3.3.1 | EMK dosage test |  | 8w | 2009-08-01 A | 2009-09-25 | 19 | 11% | 7.11w | 32.23d | 0d |  | lewis | 320h | 35.7h |
| 22 | 3.3.2 | New container with heating and calibration |  | 1d | 2009-07-13 | 2009-07-14 |  |  |  | 91.22d |  |  |  |  |  |
| 23 | 3.3.3 | cannister with seesaw |  | 1d? | 2009-07-13 | 2009-07-14 |  |  |  | 91.22d |  |  |  |  |  |
| 24 | 3.4 | **Ceramic valve** |  | 56d | 2009-07-13 | 2009-09-28 |  |  |  | 31d |  |  |  | 320h |  |
| 25 | 3.4.1 | two disk + one motor |  | 6w | 2009-07-13 | 2009-08-21 |  |  |  | 62.23d |  |  | hard | 240h |  |
| 26 | 3.4.2 | single disk |  | 2w | 2009-09-14 | 2009-09-28 |  |  |  | 31d |  | start no earlier than 2009-09-14 | hard | 80h |  |

Notes:
- 3: �freestanding cup/ �water system/ �mixer/ �cannister/ �ceramic valve/ �error handling
- 4: �sl1000 cup/ �cleaning/ �standy by/function off/ �component features
- 5: �error handling/ �software download
- 6: most svmc software ready
- 21: 1.dosage test report http://10.10.0.45/blog/?p=18/ 2.meeting: http://10.10.0.45/blog/?p=45/ 3.more test needed / break by FVT test from 28/8-31/8, and 75395 FVT test
- 26: use 2 disk program to drive one disk / single disk / switch componet for mdf done, need to write code for component

| ID | WBS | Task | Duration | Start | Finish | Predecessors | Complete | Remaining | Total slack | Constraint | Resources | Work | Actual work |
| --- | --- | --- | --- | --- | --- | --- | --- | --- | --- | --- | --- | --- | --- |
| 27 | 3.5 | **cup system and door system** | 87d | 2009-07-13 A | 2009-11-09 |  | 40% | 52.46d | 0d |  |  | 544h | 216h |
| 28 | 3.5.1 | **Freestanding cup mockup** | 9d | 2009-07-13 A | 2009-07-24 A |  | 100% |  |  |  |  | 72h | 72h |
| 29 | 3.5.1.1 | moter/sensor validation | 5d | 2009-07-13 A | 2009-07-20 A |  | 100% |  |  |  | peter | 40h | 40h |
| 30 | 3.5.1.2 | cup dispensing | 4d | 2009-07-20 A | 2009-07-24 A | 29 | 100% |  |  |  | peter | 32h | 32h |
| 31 | 3.5.2 | **sl1000 cup** | 78d | 2009-07-24 A | 2009-11-09 |  | 31% | 54.2d | 0d |  |  | 472h | 144h |
| 32 | 3.5.2.1 | study cup/io code | 3d | 2009-07-24 A | 2009-07-29 A | 30 | 100% |  |  |  | peter | 24h | 24h |
| 33 | 3.5.2.2 | test cup bus/protocol on pc | 1w | 2009-07-29 A | 2009-08-04 A | 32 | 100% |  |  |  | peter | 40h | 40h |
| 34 | 3.5.2.3 | cup board no os framework | 2w | 2009-08-04 A | 2009-08-18 A | 33 | 100% |  |  |  | peter | 80h | 80h |
| 35 | 3.5.2.4 | cup bus | 2w | 2009-09-14 | 2009-09-28 | 15 |  |  | 0d |  | peter | 80h |  |
| 36 | 3.5.2.5 | cup board app | 1w | 2009-09-28 | 2009-10-05 | 35 |  |  | 0d |  | peter | 40h |  |
| 37 | 3.5.2.6 | stick system | 2d | 2009-10-05 | 2009-10-07 | 36 |  |  | 0d |  | peter | 16h |  |
| 38 | 3.5.2.7 | escrow | 2d | 2009-10-07 | 2009-10-09 | 37 |  |  | 0d |  | peter | 16h |  |
| 39 | 3.5.2.8 | door | 2d | 2009-10-09 | 2009-10-13 | 38 |  |  | 0d |  | peter | 16h |  |
| 40 | 3.5.2.9 | app for old sl system | 4w | 2009-10-13 | 2009-11-09 | 39 |  |  | 0d |  | peter | 160h |  |
| 41 | 3.6 | **Boiler (volume/heating control)** | 16d | 2009-09-10 | 2009-10-02 |  |  |  | 27d |  |  | 80h |  |
| 42 | 3.6.1 | Instant/ES boiler improvement | 1w | 2009-09-25 | 2009-10-02 | 21 |  |  | 27d |  | lewis | 40h |  |
| 43 | 3.6.2 | Steam boiler | 1w | 2009-09-10 | 2009-09-17 |  |  |  | 38d | start no earlier than 2009-09-10 | hard | 40h |  |
| 44 | 3.7 | **proximity sensor** | 34d | 2009-07-13 A | 2009-08-27 A |  | 100% |  |  |  |  | 272h | 272h |
| 45 | 3.7.1 | Capsense sensor pSoc firmware | 5d | 2009-07-13 A | 2009-07-20 A |  | 100% |  |  |  | alan | 40h | 40h |
| 46 | 3.7.2 | test | 3w | 2009-07-20 A | 2009-08-07 A | 45 | 100% |  |  |  | alan | 120h | 120h |
| 47 | 3.7.3 | improvement | 14d | 2009-08-07 A | 2009-08-27 A | 46 | 100% |  |  |  | alan | 112h | 112h |
| 48 | 3.8 | cooling | 2mo | 2009-08-17 | 2009-10-12 |  |  |  | 21d | start no earlier than 2009-08-17 | jerry | 320h |  |
| 49 | 3.9 | DC motor control improvement | 1d? | 2009-07-13 | 2009-07-14 |  |  |  | 86d |  |  |  |  |
| 50 | 3.10 | mdf support(machine designer) for new component | 3d | 2009-07-13 | 2009-07-16 |  |  |  | 84d |  | donald | 24h |  |

Notes:
- 29: �source in http://10.10.0.45/source/trunk/SVMC/test/test_free_standing_cup/ �connetion doc: http://10.10.0.45/blog/?p=49
- 30: �090724,moter/sensor control, whole dispense process ok/ �problems: cycle time too long, too noise, cup dispense fail with lean cup./ �need ME improvement
- 40: with old bus,old component
- 43: for sl code done, need to port to gz code
- 46: �test result :http://10.10.0.45/blog/?p=37/ �meeting: http://10.10.0.45/blog/?p=52/ �

| ID | WBS | Task | Duration | Start | Finish | Predecessors | Complete | Remaining | Total slack | Free slack | Constraint | Resources | Work | Actual work |
| --- | --- | --- | --- | --- | --- | --- | --- | --- | --- | --- | --- | --- | --- | --- |
| 52 | 3.11 | **GFV support** | 32d? | 2009-07-13 A | 2009-08-25 |  | 40% | 19.2d? | 55d |  |  |  | 80h | 80h |
| 53 | 3.11.1 | code analyse | 2w? | 2009-07-29 A | 2009-08-11 A |  | 100% |  |  |  | start no earlier than 2009-07-29 | jerry | 80h | 80h |
| 54 | 3.11.2 | test cup bus/protocol on pc | 2w | 2009-08-11 A | 2009-08-25 A | 53 | 100% |  |  |  |  |  |  |  |
| 55 | 3.11.3 | protocol | 1w? | 2009-07-13 | 2009-07-20 |  |  |  | 57d | 0d |  |  |  |  |
| 56 | 3.11.4 | Machine & MachineMgr | 3w | 2009-07-20 | 2009-08-07 | 55 |  |  | 57d | 0d |  |  |  |  |
| 57 | 3.11.5 | product management | 2w | 2009-08-07 | 2009-08-21 | 56 |  |  | 57d |  |  |  |  |  |
| 59 | 3.12 | **Others** | 2d | 2009-08-19 A | 2009-08-21 A |  | 100% |  |  |  |  |  | 16h | 16h |
| 60 | 3.12.1 | 75495 test | 2d | 2009-08-19 A | 2009-08-21 A | 33 | 100% |  |  |  | start no earlier than 2009-08-19 | peter | 16h | 16h |
| 62 | 4 | **component features** | 1d? | 2009-07-31 | 2009-08-01 | 3 |  |  | 72d |  |  |  |  |  |
| 63 | 4.1 | test function improvement | 1d? | 2009-07-31 | 2009-08-01 |  |  |  | 72d |  |  |  |  |  |
| 64 | 4.2 | multi-language | 1d? | 2009-07-31 | 2009-08-01 |  |  |  | 72d |  |  |  |  |  |
| 65 | 4.3 | component initialization improvement | 1d? | 2009-07-31 | 2009-08-01 |  |  |  | 72d |  |  |  |  |  |
| 66 | 4.4 | component interface improvement | 1d? | 2009-07-31 | 2009-08-01 |  |  |  | 72d |  |  |  |  |  |
| 67 | 4.5 | statistics? | 1d? | 2009-07-31 | 2009-08-01 |  |  |  | 72d |  |  |  |  |  |
| 69 | 5 | **machine error handling improvement** | 5d? | 2009-07-31 | 2009-08-06 | 3 |  |  | 68d |  |  |  |  |  |
| 70 | 5.1 | analyse | 1d? | 2009-07-31 | 2009-08-01 |  |  |  | 72d |  |  |  |  |  |
| 71 | 5.2 | components get_gate_status | 1w | 2009-07-31 | 2009-08-06 |  |  |  | 68d |  |  |  |  |  |
| 72 | 5.3 | build tree gate status/storage support | 1w | 2009-07-31 | 2009-08-06 |  |  |  | 68d |  |  |  |  |  |
| 73 | 5.4 | ingredient fill detection(proximity sensor) | 2d | 2009-07-31 | 2009-08-03 |  |  |  | 71d |  |  |  |  |  |
| 74 | 5.5 | recoverable error | 1d? | 2009-07-31 | 2009-08-01 |  |  |  | 72d |  |  |  |  |  |
| 75 | 5.6 | fatal error | 1d? | 2009-07-31 | 2009-08-01 |  |  |  | 72d |  |  |  |  |  |
| 76 | 5.7 | vend state/Machine support <product available> | 1d? | 2009-07-31 | 2009-08-01 |  |  |  | 72d |  |  |  |  |  |
| 78 | 6 | **machine standby/function off** | 5d? | 2009-07-31 | 2009-08-06 | 3 |  |  | 68d |  |  |  |  |  |
| 79 | 6.1 | sleep / wakeup | 1d? | 2009-07-31 | 2009-08-01 |  |  |  | 72d |  |  |  |  |  |
| 80 | 6.2 | boiler | 1d? | 2009-07-31 | 2009-08-01 |  |  |  | 72d |  |  |  |  |  |
| 81 | 6.3 | LCD | 1w | 2009-07-31 | 2009-08-06 |  |  |  | 68d |  |  |  |  |  |
| 82 | 6.4 | cannister heat | 1w | 2009-07-31 | 2009-08-06 |  |  |  | 68d |  |  |  |  |  |
| 83 | 6.5 | brewer heat | 1d? | 2009-07-31 | 2009-08-01 |  |  |  | 72d |  |  |  |  |  |

Notes:
- 55: jerry switch to F9, task suspend
- 62: after service tool adjustment/test function ready

| ID | WBS | Task | Duration | Start | Finish | Predecessors | Complete | Remaining | Total slack | Constraint | Resources | Work | Actual work |
| --- | --- | --- | --- | --- | --- | --- | --- | --- | --- | --- | --- | --- | --- |
| 85 | 7 | **Features** | 3.5d | 2009-07-11 A | 2009-07-16 |  | 69% | 1.09d | 83.62d |  |  | 56h | 44h |
| 86 | 7.1 | combine bus poll messages | 2d | 2009-07-11 A | 2009-07-14 A |  | 100% |  |  |  | donald | 16h | 16h |
| 87 | 7.2 | progress support | 2d | 2009-07-11 A | 2009-07-14 A | 86 | 100% |  |  |  | donald | 16h | 16h |
| 88 | 7.3 | reset & interactive with main board | 3d | 2009-07-11 A | 2009-07-16 | 87 | 50% | 1.5d | 83.62d |  | donald | 24h | 12h |
| 89 | 7.4 | reset/watch dog | 1d | 2009-07-13 | 2009-07-14 |  |  |  | 86d |  |  |  |  |
| 91 | 8 | **clean program** | 10d | 2009-08-31 | 2009-09-14 | 4 |  |  | 41d |  |  |  |  |
| 92 | 8.1 | Brewer cleaning program | 2w | 2009-08-31 | 2009-09-14 |  |  |  | 41d |  |  |  |  |
| 93 | 8.2 | Hot-Flush program(every day) | 1w | 2009-08-31 | 2009-09-07 |  |  |  | 46d |  |  |  |  |
| 94 | 8.3 | Rising program to remove bacteria(2wk period) | 1w | 2009-08-31 | 2009-09-07 |  |  |  | 46d |  |  |  |  |
| 95 | 8.4 | Descale program for hot water sytem(half-year period) | 2w | 2009-08-31 | 2009-09-14 |  |  |  | 41d |  |  |  |  |
| 97 | 9 | **software update** | 5d? | 2009-08-31 | 2009-09-07 | 4 |  |  | 46d |  |  |  |  |
| 98 | 9.1 | **boot loader** | 5d | 2009-08-31 | 2009-09-07 |  |  |  | 46d |  |  |  |  |
| 99 | 9.1.1 | boot loader for 51 | 1w | 2009-08-31 | 2009-09-07 |  |  |  | 46d |  |  |  |  |
| 100 | 9.1.2 | boot loader for arm7 | 1w | 2009-08-31 | 2009-09-07 |  |  |  | 46d |  |  |  |  |
| 101 | 9.2 | download program | 1d? | 2009-08-31 | 2009-09-01 |  |  |  | 50d |  |  |  |  |
| 102 | 9.3 | hex2bin | 1d? | 2009-08-31 | 2009-09-01 |  |  |  | 50d |  |  |  |  |
| 103 | 9.4 | protocol | 1w | 2009-08-31 | 2009-09-07 |  |  |  | 46d |  |  |  |  |
| 104 | 9.5 | flash driver | 1w | 2009-08-31 | 2009-09-07 |  |  |  | 46d |  |  |  |  |
| 105 | 9.6 | Servicetool UI for upgrading | 1d? | 2009-08-31 | 2009-09-01 |  |  |  | 50d |  |  |  |  |
| 106 | 9.7 | CE auto run and USB stick upgrading | 1d? | 2009-08-31 | 2009-09-01 |  |  |  | 50d |  |  |  |  |
| 108 | 10 | **BSP** | 63d | 2009-07-23 A | 2009-10-19 |  | 3% | 61.32d | 16d |  | alan | 504h | 13.44h |
| 109 | 10.1 | investigate 2416/2440 BSP status | 2d | 2009-07-23 A | 2009-07-27 A |  | 100% |  |  | start no earlier than 2009-07-23 |  |  |  |
| 110 | 10.2 | supprot pixcir touch screen | 2w | 2009-08-17 | 2009-08-31 |  |  |  | 51d | start no earlier than 2009-08-17 |  |  |  |
| 111 | 10.3 | eely touch screen | 1mo | 2009-09-10 | 2009-10-08 |  |  |  | 23d | start no earlier than 2009-09-10 |  |  |  |
| 112 | 10.4 | 9261 bsp update test | 1w | 2009-09-10 | 2009-09-17 |  |  |  | 38d | start no earlier than 2009-09-10 |  |  |  |
| 113 | 10.5 | AC97 driver for 9261 | 1mo | 2009-09-14 | 2009-10-12 |  |  |  | 21d | start no earlier than 2009-09-14 |  |  |  |
| 114 | 10.6 | backlight | 3d | 2009-09-10 | 2009-09-15 |  |  |  | 40d | start no earlier than 2009-09-10 |  |  |  |
| 115 | 10.7 | 6410 BSP | 3w | 2009-09-28 | 2009-10-19 |  |  |  | 16d | start no earlier than 2009-09-28 |  |  |  |

Notes:
- 88: message done, need real reset
- 109: no ce 6 bsp for 2440, might select 6410 for high performance platform
- 113: Code done, wait new main board to debug
- 114: wait for HW circurt modification / Sept.2: Implement backlight driver for Innolux 7" TN84
